# Destination Opening Programme - Integrated Master Schedule

How a schedule from Primavera P6 changed from version to version. A marks actual dates.

## Version 1 (data date 2026-04-30, saved 2026-04-30, file DOP_BL0.xer)

Note of the change: feat(data): synthetic integrated master schedule, storyline, progress simulation and P6 XER export

| ID | WBS | Task | Duration | Start | Finish | Predecessors | Complete | Total float | Constraint |
| --- | --- | --- | --- | --- | --- | --- | --- | --- | --- |
|  | MTP | **Mesa Theme Park** |  | 2025-10-11 | 2027-09-14 |  |  |  |  |
|  | CON | **Construction** |  | 2025-10-11 | 2027-02-09 |  |  |  |  |
|  | EXT | **External Works** |  | 2026-12-02 | 2027-02-09 |  |  |  |  |
| MTP-CON-1410 |  | External works & landscaping | 40d | 2026-12-02 | 2027-01-17 | MTP-CON-1040, MTP-CON-1220 |  | 72d |  |
| MTP-CON-1430 |  | Car parks & drop-off | 30d | 2026-12-14 | 2027-01-17 | MTP-CON-1010, MTP-CON-1410 FF |  | 72d |  |
| MTP-CON-M142 |  | Ready for commissioning (construction complete) | 0d | 2027-02-09 | 2027-02-09 | MTP-CON-1135, MTP-CON-1140, MTP-CON-1150, MTP-CON-1210, MTP-CON-1230, MTP-CON-1340, MTP-CON-1430 |  | 52d |  |
|  | FIT | **Fit-out & Finishes** |  | 2026-03-09 | 2027-02-09 |  |  |  |  |
| MTP-CON-1050 |  | Internal partitions & ceilings | 35d | 2026-03-09 A | 2026-04-21 A | MTP-CON-1030, MTP-CON-1040 | 100% |  |  |
| MTP-CON-1210 |  | Back-of-house fit-out | 40d | 2026-10-12 | 2026-11-26 | MTP-CON-1132 |  | 4d |  |
| MTP-CON-1220 |  | Front-of-house fit-out & finishes | 44d | 2026-10-12 | 2026-12-01 | MTP-CON-1132, MTP-CON-1320 |  | 0d |  |
| MTP-CON-1225 |  | FOH final finishes & joinery | 40d | 2026-12-02 | 2027-01-17 | MTP-CON-1150, MTP-CON-1220 |  | 52d |  |
| MTP-CON-1230 |  | Signage & wayfinding | 20d | 2027-01-18 | 2027-02-09 | MTP-CON-1225 |  | 52d |  |
|  | MEP | **MEP Installation** |  | 2026-01-17 | 2026-11-21 |  |  |  |  |
| MTP-CON-1110 |  | MEP first fix - lower levels | 44d | 2026-01-17 A | 2026-03-08 A | MTP-CON-1020 | 100% |  |  |
| MTP-CON-1112 |  | MEP first fix - upper levels & roof plant | 40d | 2026-03-09 A | 2026-04-27 A | MTP-CON-1110 | 100% |  |  |
| MTP-CON-1105 |  | Long-lead MEP plant procurement & delivery | 44d | 2026-04-04 A | 2026-05-24 | PRG-D1R-M000 | 52% | 0d | start on or after 2026-04-04 |
| MTP-CON-1120 |  | Main plant installation (chillers, switchgear, AHUs) | 35d | 2026-05-25 | 2026-07-08 | MTP-CON-1030, MTP-CON-1105 |  | 0d |  |
| MTP-CON-1131 |  | MEP second fix - Zone A | 40d | 2026-07-09 | 2026-08-24 | MTP-CON-1050, MTP-CON-1112, MTP-CON-1120 |  | 0d |  |
| MTP-CON-1132 |  | MEP second fix - Zone B | 40d | 2026-08-25 | 2026-10-11 | MTP-CON-1131 |  | 0d |  |
| MTP-CON-1140 |  | BMS & ELV installation | 35d | 2026-08-25 | 2026-10-05 | MTP-CON-1120, MTP-CON-1131 |  | 49d |  |
| MTP-CON-1135 |  | MEP second fix - Zone C (BOH & plant rooms) | 35d | 2026-09-12 | 2026-10-22 | MTP-CON-1132 SS+15d |  | 34d |  |
| MTP-CON-1150 |  | Vertical transportation installation | 35d | 2026-10-12 | 2026-11-21 | MTP-CON-1132 |  | 61d |  |
|  | MGT | **Management & Supervision** |  | 2025-10-11 | 2027-02-09 |  |  |  |  |
| MTP-CON-9010 |  | Construction supervision & site management (LOE) | 410d | 2025-10-11 A | 2027-02-09 | MTP-CON-1010 SS, MTP-CON-M142 FF | 41% | 52d |  |
|  | STR | **Structure & Envelope** |  | 2025-10-11 | 2026-03-08 |  |  |  |  |
| MTP-CON-1010 |  | Substructure & foundations | 40d | 2025-10-11 A | 2025-11-25 A | PRG-D1R-M000 | 100% |  | start on or after 2025-10-11 |
| MTP-CON-1020 |  | Superstructure frame | 44d | 2025-11-26 A | 2026-01-15 A | MTP-CON-1010 | 100% |  |  |
| MTP-CON-1030 |  | Roof structure & roofing | 40d | 2026-01-17 A | 2026-03-03 A | MTP-CON-1020 | 100% |  |  |
| MTP-CON-1040 |  | Building envelope & facade | 44d | 2026-01-17 A | 2026-03-08 A | MTP-CON-1020 | 100% |  |  |
|  | SYS | **Specialist Systems** |  | 2026-03-04 | 2026-11-29 |  |  |  |  |
| MTP-CON-1310 |  | Ride systems installation (all rides) | 110d | 2026-03-04 A | 2026-07-18 | MTP-CON-1030 | 42% | 32d |  |
| MTP-CON-1320 |  | Ride control systems & ride enclosures | 40d | 2026-07-19 | 2026-09-02 | MTP-CON-1310 |  | 32d |  |
| MTP-CON-1330 |  | Theming & show elements | 44d | 2026-09-03 | 2026-10-25 | MTP-CON-1320 |  | 36d |  |
| MTP-CON-1340 |  | Ride & show control integration | 30d | 2026-10-26 | 2026-11-29 | MTP-CON-1330 |  | 36d |  |
|  | TNC | **Testing & Commissioning** |  | 2026-12-02 | 2027-04-05 |  |  |  |  |
|  | COM | **Systems Commissioning** |  | 2026-12-22 | 2027-03-21 |  |  |  |  |
| MTP-TNC-2120 |  | Electrical systems commissioning | 20d | 2026-12-22 | 2027-01-10 | MTP-TNC-2010 |  | 0d |  |
| MTP-TNC-2130 |  | Fire & life safety systems commissioning | 25d | 2027-01-11 | 2027-02-04 | MTP-TNC-2120 |  | 71d |  |
| MTP-TNC-2140 |  | Ride testing & commissioning (static & dynamic) | 40d | 2027-01-11 | 2027-02-19 | MTP-CON-1340, MTP-TNC-2120 |  | 0d | mandatory start 2027-01-11 |
| MTP-TNC-2160 |  | Vertical transportation testing & certification | 10d | 2027-01-11 | 2027-01-20 | MTP-CON-1150, MTP-TNC-2120 |  | 86d |  |
| MTP-TNC-2110 |  | HVAC & chilled water commissioning | 25d | 2027-01-13 | 2027-02-06 | MTP-TNC-2010, PEW-TNC-M041 |  | 34d |  |
| MTP-TNC-2150 |  | BMS & ELV commissioning | 20d | 2027-02-07 | 2027-02-26 | MTP-TNC-2110 |  | 34d |  |
| MTP-TNC-2145 |  | Ride cycle testing & third-party certification | 30d | 2027-02-20 | 2027-03-21 | MTP-TNC-2140 |  | 26d |  |
| MTP-TNC-2170 |  | Security systems (CCTV, access control) commissioning | 15d | 2027-02-27 | 2027-03-13 | MTP-TNC-2150 |  | 34d |  |
|  | IST | **Integrated Systems Testing** |  | 2027-03-22 | 2027-04-05 |  |  |  |  |
| MTP-TNC-2210 |  | Integrated systems test (IST) | 15d | 2027-03-22 | 2027-04-05 | MTP-CON-M142, MTP-TNC-2130, MTP-TNC-2145, MTP-TNC-2150, MTP-TNC-2160, MTP-TNC-2170 |  | 26d |  |
| MTP-TNC-M220 |  | T&C complete (ICA certificate) | 0d | 2027-04-05 | 2027-04-05 | MTP-TNC-2210 |  | 26d |  |
|  | PRE | **Pre-commissioning** |  | 2026-12-02 | 2026-12-21 |  |  |  |  |
| MTP-TNC-2010 |  | Pre-commissioning checks (electrical & mechanical) | 20d | 2026-12-02 | 2026-12-21 | MTP-CON-1132, MTP-CON-1135, MTP-CON-1140, MTP-CON-1210, MTP-CON-1220, PEW-TNC-M021 |  | 0d |  |
|  | HOV | **Handover** |  | 2027-02-10 | 2027-05-31 |  |  |  |  |
|  | APR | **Authority Inspections & Approvals** |  | 2027-04-06 | 2027-05-31 |  |  |  |  |
| MTP-HOV-3110 |  | Civil defence & fire authority inspection | 15d | 2027-04-06 | 2027-04-26 | MTP-TNC-M220 |  | 18d |  |
| MTP-HOV-3120 |  | Completion certificate application & review | 20d | 2027-04-27 | 2027-05-31 | MTP-HOV-3010, MTP-HOV-3110 |  | 18d |  |
| MTP-HOV-M130 |  | Occupancy certificate issued | 0d | 2027-05-31 | 2027-05-31 | MTP-HOV-3120 |  | 18d |  |
|  | HND | **Completion & Handover** |  | 2027-03-18 | 2027-05-31 |  |  |  |  |
| MTP-HOV-3220 |  | Defects walkdown with operator | 5d | 2027-03-18 | 2027-03-23 | MTP-HOV-3010 FS-3d |  | 123d |  |
| MTP-HOV-3210 |  | Handover documentation (O&M, as-builts, warranties) | 25d | 2027-04-06 | 2027-05-10 | MTP-TNC-M220 |  | 68d |  |
| MTP-HOV-M230 |  | Handover to operator | 0d | 2027-05-31 | 2027-05-31 | MTP-HOV-3210, MTP-HOV-3220, MTP-HOV-M130 |  | 69d |  |
|  | SNG | **Snagging & Defects** |  | 2027-02-10 | 2027-03-21 |  |  |  |  |
| MTP-HOV-3010 |  | Snagging & defects rectification | 30d | 2027-02-10 | 2027-03-21 | MTP-CON-M142 |  | 54d |  |
|  | OPM | **Operator Mobilisation & Training** |  | 2026-10-18 | 2027-07-28 |  |  |  |  |
|  | RCT | **Recruitment & Onboarding** |  | 2026-10-18 | 2027-04-21 |  |  |  |  |
| MTP-OPM-4010 |  | Recruitment wave 1 (leadership & technical) | 40d | 2026-10-18 | 2026-12-10 | PRG-OPM-4010 SS+20d |  | 41d | start on or after 2026-10-18 |
| MTP-OPM-4015 |  | Recruitment wave 2 (front-line staff) | 40d | 2026-12-13 | 2027-02-04 | MTP-OPM-4010 |  | 41d |  |
| MTP-OPM-4020 |  | Onboarding & induction | 20d | 2027-02-07 | 2027-03-07 | MTP-OPM-4015 |  | 41d |  |
| MTP-OPM-4030 |  | Uniforms, IT & systems provisioning | 30d | 2027-03-08 | 2027-04-21 | MTP-OPM-4020 |  | 120d |  |
|  | TRN | **Training & Familiarisation** |  | 2027-03-08 | 2027-07-28 |  |  |  |  |
| MTP-OPM-4110 |  | Classroom & simulator training | 30d | 2027-03-08 | 2027-04-21 | MTP-OPM-4020 |  | 41d |  |
| MTP-OPM-M120 |  | Operator site access granted | 0d | 2027-04-06 | 2027-04-06 | MTP-TNC-M220 |  | 64d | start on or after 2027-03-06 |
| MTP-OPM-4130 |  | On-site familiarisation & equipment training | 30d | 2027-06-01 | 2027-06-30 | MTP-HOV-M130, MTP-OPM-4110, MTP-OPM-M120 |  | 24d |  |

| ID | WBS | Task | Duration | Start | Finish | Predecessors | Complete | Total float | Constraint |
| --- | --- | --- | --- | --- | --- | --- | --- | --- | --- |
| MTP-OPM-4140 |  | SOPs & emergency procedures validated | 20d | 2027-07-01 | 2027-07-28 | MTP-OPM-4130 |  | 16d |  |
| MTP-OPM-M150 |  | Operator trained & certified | 0d | 2027-07-28 | 2027-07-28 | MTP-OPM-4140 |  | 16d |  |
|  | OTE | **Operational Trials & Test Events** |  | 2027-07-29 | 2027-09-05 |  |  |  |  |
|  | TEV | **Test Events** |  | 2027-08-23 | 2027-09-05 |  |  |  |  |
| MTP-OTE-5110 |  | Test events (invited guests) | 14d | 2027-08-23 | 2027-09-05 | MTP-HOV-M130, MTP-OTE-5020, MTP-OTE-5030 |  | 22d |  |
|  | TRL | **Operational Trials** |  | 2027-07-29 | 2027-08-22 |  |  |  |  |
| MTP-OTE-5010 |  | Operational trials (technical rehearsals) | 20d | 2027-07-29 | 2027-08-17 | MTP-HOV-M230, MTP-OPM-M150 |  | 22d |  |
| MTP-OTE-5030 |  | Ticketing & POS systems trial | 7d | 2027-08-01 | 2027-08-07 | MTP-OTE-5010 SS+3d, PRG-OTE-5010 |  | 37d |  |
| MTP-OTE-5020 |  | Emergency drills with civil defence | 5d | 2027-08-18 | 2027-08-22 | MTP-OTE-5010 |  | 22d |  |
|  | D1R | **Day 1 Readiness** |  | 2027-09-06 | 2027-09-14 |  |  |  |  |
|  | GAT | **Readiness Gates** |  | 2027-09-06 | 2027-09-14 |  |  |  |  |
| MTP-D1R-6010 |  | Operational readiness assessment | 7d | 2027-09-06 | 2027-09-14 | MTP-OTE-5110 |  | 16d |  |
| MTP-D1R-M020 |  | Asset Day 1 ready | 0d | 2027-09-14 | 2027-09-14 | MTP-D1R-6010 |  | 24d |  |
|  | LWP | **Lagoon Water Park** |  | 2026-01-31 | 2027-09-14 |  |  |  |  |
|  | CON | **Construction** |  | 2026-01-31 | 2027-03-30 |  |  |  |  |
|  | EXT | **External Works** |  | 2027-01-16 | 2027-03-30 |  |  |  |  |
| LWP-CON-1410 |  | External works & landscaping | 40d | 2027-01-16 | 2027-03-03 | LWP-CON-1040, LWP-CON-1220 |  | 48d |  |
| LWP-CON-1430 |  | Car parks & drop-off | 30d | 2027-01-27 | 2027-03-03 | LWP-CON-1010, LWP-CON-1410 FF |  | 48d |  |
| LWP-CON-M142 |  | Ready for commissioning (construction complete) | 0d | 2027-03-30 | 2027-03-30 | LWP-CON-1135, LWP-CON-1140, LWP-CON-1150, LWP-CON-1210, LWP-CON-1230, LWP-CON-1340, LWP-CON-1430 |  | 28d |  |
|  | FIT | **Fit-out & Finishes** |  | 2026-07-07 | 2027-03-30 |  |  |  |  |
| LWP-CON-1050 |  | Internal partitions & ceilings | 35d | 2026-07-07 | 2026-08-16 | LWP-CON-1030, LWP-CON-1040 |  | 29d |  |
| LWP-CON-1210 |  | Back-of-house fit-out | 40d | 2026-11-25 | 2027-01-10 | LWP-CON-1132 |  | 28d |  |
| LWP-CON-1220 |  | Front-of-house fit-out & finishes | 44d | 2026-11-25 | 2027-01-14 | LWP-CON-1132 |  | 24d |  |
| LWP-CON-1225 |  | FOH final finishes & joinery | 40d | 2027-01-16 | 2027-03-03 | LWP-CON-1150, LWP-CON-1220 |  | 28d |  |
| LWP-CON-1230 |  | Signage & wayfinding | 20d | 2027-03-04 | 2027-03-30 | LWP-CON-1225 |  | 28d |  |
|  | MEP | **MEP Installation** |  | 2026-05-02 | 2027-01-04 |  |  |  |  |
| LWP-CON-1105 |  | Long-lead MEP plant procurement & delivery | 44d | 2026-05-02 | 2026-06-25 | PRG-D1R-M000 |  | 38d | start on or after 2026-05-02 |
| LWP-CON-1110 |  | MEP first fix - lower levels | 44d | 2026-05-12 | 2026-07-06 | LWP-CON-1020 |  | 24d |  |
| LWP-CON-1120 |  | Main plant installation (chillers, switchgear, AHUs) | 35d | 2026-07-02 | 2026-08-11 | LWP-CON-1030, LWP-CON-1105 |  | 33d |  |
| LWP-CON-1112 |  | MEP first fix - upper levels & roof plant | 40d | 2026-07-07 | 2026-08-22 | LWP-CON-1110 |  | 24d |  |
| LWP-CON-1131 |  | MEP second fix - Zone A | 40d | 2026-08-23 | 2026-10-08 | LWP-CON-1050, LWP-CON-1112, LWP-CON-1120 |  | 24d |  |
| LWP-CON-1132 |  | MEP second fix - Zone B | 40d | 2026-10-10 | 2026-11-24 | LWP-CON-1131 |  | 24d |  |
| LWP-CON-1140 |  | BMS & ELV installation | 35d | 2026-10-10 | 2026-11-18 | LWP-CON-1120, LWP-CON-1131 |  | 73d |  |
| LWP-CON-1135 |  | MEP second fix - Zone C (BOH & plant rooms) | 35d | 2026-10-27 | 2026-12-06 | LWP-CON-1132 SS+15d |  | 58d |  |
| LWP-CON-1150 |  | Vertical transportation installation | 35d | 2026-11-25 | 2027-01-04 | LWP-CON-1132 |  | 37d |  |
|  | MGT | **Management & Supervision** |  | 2026-01-31 | 2027-03-30 |  |  |  |  |
| LWP-CON-9010 |  | Construction supervision & site management (LOE) | 352d | 2026-01-31 A | 2027-03-30 | LWP-CON-1010 SS, LWP-CON-M142 FF | 21% | 28d |  |
|  | STR | **Structure & Envelope** |  | 2026-01-31 | 2026-07-06 |  |  |  |  |
| LWP-CON-1010 |  | Substructure & foundations | 40d | 2026-01-31 A | 2026-03-17 A | PRG-D1R-M000 | 100% |  | start on or after 2026-01-31 |
| LWP-CON-1020 |  | Superstructure frame | 44d | 2026-03-18 A | 2026-05-11 | LWP-CON-1010 | 77% | 24d |  |
| LWP-CON-1030 |  | Roof structure & roofing | 40d | 2026-05-12 | 2026-07-01 | LWP-CON-1020 |  | 33d |  |
| LWP-CON-1040 |  | Building envelope & facade | 44d | 2026-05-12 | 2026-07-06 | LWP-CON-1020 |  | 29d |  |
|  | SYS | **Specialist Systems** |  | 2026-08-23 | 2027-02-13 |  |  |  |  |
| LWP-CON-1310 |  | Slide towers & flumes installation | 44d | 2026-08-23 | 2026-10-13 | LWP-CON-1112 |  | 29d |  |
| LWP-CON-1320 |  | Water treatment & filtration plant installation | 40d | 2026-10-14 | 2026-11-29 | LWP-CON-1310 |  | 29d |  |
| LWP-CON-1330 |  | Pool finishes & water features | 35d | 2026-11-30 | 2027-01-09 | LWP-CON-1320 |  | 29d |  |
| LWP-CON-1340 |  | Slide & attraction control integration | 30d | 2027-01-10 | 2027-02-13 | LWP-CON-1330 |  | 29d |  |
|  | TNC | **Testing & Commissioning** |  | 2027-01-15 | 2027-04-24 |  |  |  |  |
|  | COM | **Systems Commissioning** |  | 2027-02-04 | 2027-04-09 |  |  |  |  |
| LWP-TNC-2110 |  | HVAC & chilled water commissioning | 25d | 2027-02-04 | 2027-02-28 | LWP-TNC-2010, PEW-TNC-M041 |  | 33d |  |
| LWP-TNC-2120 |  | Electrical systems commissioning | 20d | 2027-02-04 | 2027-02-23 | LWP-TNC-2010 |  | 28d |  |
| LWP-TNC-2130 |  | Fire & life safety systems commissioning | 25d | 2027-02-24 | 2027-03-20 | LWP-TNC-2120 |  | 48d |  |
| LWP-TNC-2140 |  | Water treatment & filtration commissioning | 25d | 2027-02-24 | 2027-03-20 | LWP-CON-1340, LWP-TNC-2120 |  | 28d |  |
| LWP-TNC-2160 |  | Vertical transportation testing & certification | 10d | 2027-02-24 | 2027-03-05 | LWP-CON-1150, LWP-TNC-2120 |  | 63d |  |
| LWP-TNC-2150 |  | BMS & ELV commissioning | 20d | 2027-03-01 | 2027-03-20 | LWP-TNC-2110 |  | 33d |  |
| LWP-TNC-2145 |  | Water quality stabilisation & slide testing | 20d | 2027-03-21 | 2027-04-09 | LWP-TNC-2140 |  | 28d |  |
| LWP-TNC-2170 |  | Security systems (CCTV, access control) commissioning | 15d | 2027-03-21 | 2027-04-04 | LWP-TNC-2150 |  | 33d |  |
|  | IST | **Integrated Systems Testing** |  | 2027-04-10 | 2027-04-24 |  |  |  |  |
| LWP-TNC-2210 |  | Integrated systems test (IST) | 15d | 2027-04-10 | 2027-04-24 | LWP-CON-M142, LWP-TNC-2130, LWP-TNC-2145, LWP-TNC-2150, LWP-TNC-2160, LWP-TNC-2170 |  | 28d |  |
| LWP-TNC-M220 |  | T&C complete (ICA certificate) | 0d | 2027-04-24 | 2027-04-24 | LWP-TNC-2210 |  | 28d |  |
|  | PRE | **Pre-commissioning** |  | 2027-01-15 | 2027-02-03 |  |  |  |  |
| LWP-TNC-2010 |  | Pre-commissioning checks (electrical & mechanical) | 20d | 2027-01-15 | 2027-02-03 | LWP-CON-1132, LWP-CON-1135, LWP-CON-1140, LWP-CON-1210, LWP-CON-1220, PEW-TNC-M021 |  | 28d |  |
|  | HOV | **Handover** |  | 2027-03-31 | 2027-06-17 |  |  |  |  |
|  | APR | **Authority Inspections & Approvals** |  | 2027-04-25 | 2027-06-17 |  |  |  |  |
| LWP-HOV-3110 |  | Civil defence & fire authority inspection | 15d | 2027-04-25 | 2027-05-13 | LWP-TNC-M220 |  | 15d |  |
| LWP-HOV-3120 |  | Completion certificate application & review | 20d | 2027-05-23 | 2027-06-17 | LWP-HOV-3010, LWP-HOV-3110 |  | 15d |  |
| LWP-HOV-M130 |  | Occupancy certificate issued | 0d | 2027-06-17 | 2027-06-17 | LWP-HOV-3120 |  | 15d |  |
|  | HND | **Completion & Handover** |  | 2027-05-02 | 2027-06-17 |  |  |  |  |
| LWP-HOV-3210 |  | Handover documentation (O&M, as-builts, warranties) | 25d | 2027-05-02 | 2027-06-10 |  |  | 60d | start on or after 2027-05-02 |
| LWP-HOV-3220 |  | Defects walkdown with operator | 5d | 2027-05-05 | 2027-05-10 | LWP-HOV-3010 |  | 94d |  |

| ID | WBS | Task | Duration | Start | Finish | Predecessors | Complete | Total float | Constraint |
| --- | --- | --- | --- | --- | --- | --- | --- | --- | --- |
| LWP-HOV-M230 |  | Handover to operator | 0d | 2027-06-17 | 2027-06-17 | LWP-HOV-3210, LWP-HOV-3220, LWP-HOV-M130 |  | 66d |  |
|  | SNG | **Snagging & Defects** |  | 2027-03-31 | 2027-05-04 |  |  |  |  |
| LWP-HOV-3010 |  | Snagging & defects rectification | 30d | 2027-03-31 | 2027-05-04 | LWP-CON-M142 |  | 28d |  |
|  | OPM | **Operator Mobilisation & Training** |  | 2026-11-01 | 2027-08-12 |  |  |  |  |
|  | RCT | **Recruitment & Onboarding** |  | 2026-11-01 | 2027-05-05 |  |  |  |  |
| LWP-OPM-4010 |  | Recruitment wave 1 (leadership & technical) | 40d | 2026-11-01 | 2026-12-24 | PRG-OPM-4010 SS+20d |  | 41d | start on or after 2026-11-01 |
| LWP-OPM-4015 |  | Recruitment wave 2 (front-line staff) | 40d | 2026-12-27 | 2027-02-18 | LWP-OPM-4010 |  | 41d |  |
| LWP-OPM-4020 |  | Onboarding & induction | 20d | 2027-02-21 | 2027-03-24 | LWP-OPM-4015 |  | 41d |  |
| LWP-OPM-4030 |  | Uniforms, IT & systems provisioning | 30d | 2027-03-25 | 2027-05-05 | LWP-OPM-4020 |  | 41d |  |
|  | TRN | **Training & Familiarisation** |  | 2027-03-25 | 2027-08-12 |  |  |  |  |
| LWP-OPM-4110 |  | Classroom & simulator training | 30d | 2027-03-25 | 2027-05-05 | LWP-OPM-4020 |  | 41d |  |
| LWP-OPM-M120 |  | Operator site access granted | 0d | 2027-04-25 | 2027-04-25 | LWP-TNC-M220 |  | 60d |  |
| LWP-OPM-4130 |  | On-site familiarisation & equipment training | 30d | 2027-06-18 | 2027-07-17 | LWP-HOV-M130, LWP-OPM-4030, LWP-OPM-4110, LWP-OPM-M120 |  | 21d |  |
| LWP-OPM-4140 |  | SOPs & emergency procedures validated | 20d | 2027-07-18 | 2027-08-12 | LWP-OPM-4130 |  | 15d |  |
| LWP-OPM-M150 |  | Operator trained & certified | 0d | 2027-08-12 | 2027-08-12 | LWP-OPM-4140 |  | 15d |  |
|  | OTE | **Operational Trials & Test Events** |  | 2027-08-13 | 2027-09-06 |  |  |  |  |
|  | TEV | **Test Events** |  | 2027-08-23 | 2027-09-05 |  |  |  |  |
| LWP-OTE-5110 |  | Test events (invited guests) | 14d | 2027-08-23 | 2027-09-05 | LWP-HOV-M130, LWP-OTE-5020 SF, LWP-OTE-5030 |  | 22d |  |
|  | TRL | **Operational Trials** |  | 2027-08-13 | 2027-09-06 |  |  |  |  |
| LWP-OTE-5010 |  | Operational trials (technical rehearsals) | 20d | 2027-08-13 | 2027-09-01 | LWP-HOV-M230, LWP-OPM-M150 |  | 22d |  |
| LWP-OTE-5030 |  | Ticketing & POS systems trial | 7d | 2027-08-16 | 2027-08-22 | LWP-OPM-4030, LWP-OTE-5010 SS+3d, PRG-OTE-5010 |  | 22d |  |
| LWP-OTE-5020 |  | Emergency drills with civil defence | 5d | 2027-09-02 | 2027-09-06 | LWP-OTE-5010 |  | 26d |  |
|  | D1R | **Day 1 Readiness** |  | 2027-09-06 | 2027-09-14 |  |  |  |  |
|  | GAT | **Readiness Gates** |  | 2027-09-06 | 2027-09-14 |  |  |  |  |
| LWP-D1R-6010 |  | Operational readiness assessment | 7d | 2027-09-06 | 2027-09-14 | LWP-OTE-5110 |  | 16d |  |
| LWP-D1R-M020 |  | Asset Day 1 ready | 0d | 2027-09-14 | 2027-09-14 | LWP-D1R-6010 |  | 24d |  |
|  | DAR | **Dune Arena** |  | 2026-01-17 | 2027-09-14 |  |  |  |  |
|  | CON | **Construction** |  | 2026-01-17 | 2027-03-16 |  |  |  |  |
|  | EXT | **External Works** |  | 2027-01-02 | 2027-03-16 |  |  |  |  |
| DAR-CON-1410 |  | External works & landscaping | 40d | 2027-01-02 | 2027-02-16 | DAR-CON-1040 FS+30d, DAR-CON-1220 |  | 46d |  |
| DAR-CON-1430 |  | Car parks & drop-off | 30d | 2027-01-13 | 2027-02-16 | DAR-CON-1010, DAR-CON-1410 FF |  | 46d |  |
| DAR-CON-M142 |  | Ready for commissioning (construction complete) | 0d | 2027-03-16 | 2027-03-16 | DAR-CON-1135, DAR-CON-1140, DAR-CON-1150, DAR-CON-1210, DAR-CON-1230, DAR-CON-1340, DAR-CON-1430 |  | 26d |  |
|  | FIT | **Fit-out & Finishes** |  | 2026-06-23 | 2027-03-16 |  |  |  |  |
| DAR-CON-1050 |  | Internal partitions & ceilings | 35d | 2026-06-23 | 2026-08-02 | DAR-CON-1030, DAR-CON-1040 |  | 27d |  |
| DAR-CON-1210 |  | Back-of-house fit-out | 40d | 2026-11-11 | 2026-12-27 | DAR-CON-1132 |  | 26d |  |
| DAR-CON-1220 |  | Front-of-house fit-out & finishes | 44d | 2026-11-11 | 2026-12-31 | DAR-CON-1132 |  | 22d |  |
| DAR-CON-1225 |  | FOH final finishes & joinery | 40d | 2027-01-02 | 2027-02-16 | DAR-CON-1150, DAR-CON-1220 |  | 26d |  |
| DAR-CON-1230 |  | Signage & wayfinding | 20d | 2027-02-17 | 2027-03-16 | DAR-CON-1225 |  | 26d |  |
|  | MEP | **MEP Installation** |  | 2026-04-04 | 2026-12-21 |  |  |  |  |
| DAR-CON-1105 |  | Long-lead MEP plant procurement & delivery | 44d | 2026-04-04 A | 2026-05-24 | PRG-D1R-M000 | 52% | 48d | start on or after 2026-04-04 |
| DAR-CON-1110 |  | MEP first fix - lower levels | 44d | 2026-04-28 A | 2026-06-22 | DAR-CON-1020 | 5% | 22d |  |
| DAR-CON-1120 |  | Main plant installation (chillers, switchgear, AHUs) | 35d | 2026-06-18 | 2026-07-28 | DAR-CON-1030, DAR-CON-1105 |  | 31d |  |
| DAR-CON-1112 |  | MEP first fix - upper levels & roof plant | 40d | 2026-06-23 | 2026-08-08 | DAR-CON-1110 |  | 22d |  |
| DAR-CON-1131 |  | MEP second fix | 40d | 2026-08-09 | 2026-09-24 | DAR-CON-1050, DAR-CON-1112, DAR-CON-1120 |  | 22d |  |
| DAR-CON-1132 |  | MEP second fix | 40d | 2026-09-26 | 2026-11-10 | DAR-CON-1131 |  | 22d |  |
| DAR-CON-1140 |  | BMS & ELV installation | 35d | 2026-09-26 | 2026-11-04 | DAR-CON-1120, DAR-CON-1131 |  | 71d |  |
| DAR-CON-1135 |  | MEP second fix - Zone C (BOH & plant rooms) | 35d | 2026-10-13 | 2026-11-22 | DAR-CON-1132 SS+15d |  | 56d |  |
| DAR-CON-1150 |  | Vertical transportation installation | 35d | 2026-11-11 | 2026-12-21 | DAR-CON-1132 |  | 35d |  |
|  | MGT | **Management & Supervision** |  | 2026-01-17 | 2027-03-16 |  |  |  |  |
| DAR-CON-9010 |  | Construction supervision & site management (LOE) | 352d | 2026-01-17 A | 2027-03-16 | DAR-CON-1010 SS, DAR-CON-M142 FF | 24% | 26d |  |
|  | STR | **Structure & Envelope** |  | 2026-01-17 | 2026-06-22 |  |  |  |  |
| DAR-CON-1010 |  | Substructure & foundations | 40d | 2026-01-17 A | 2026-03-03 A | PRG-D1R-M000 | 100% |  | start on or after 2026-01-17 |
| DAR-CON-1020 |  | Superstructure frame | 44d | 2026-03-04 A | 2026-04-27 A | DAR-CON-1010 | 100% |  |  |
| DAR-CON-1030 |  | Roof structure & roofing | 40d | 2026-04-28 A | 2026-06-17 | DAR-CON-1020 | 5% | 31d |  |
| DAR-CON-1040 |  | Building envelope & facade | 44d | 2026-04-28 A | 2026-06-22 | DAR-CON-1020 | 5% | 27d |  |
|  | SYS | **Specialist Systems** |  | 2026-08-09 | 2027-02-04 |  |  |  |  |
| DAR-CON-1310 |  | Seating bowl & retractable seating | 44d | 2026-08-09 | 2026-09-29 | DAR-CON-1112 |  | 25d |  |
| DAR-CON-1320 |  | Show systems (AV, rigging, LED) installation | 40d | 2026-09-30 | 2026-11-15 | DAR-CON-1310 |  | 25d |  |
| DAR-CON-1330 |  | Premium suites & hospitality fit-out | 40d | 2026-11-16 | 2026-12-31 | DAR-CON-1320 |  | 25d |  |
| DAR-CON-1340 |  | Venue technology integration (ticketing, broadcast, IPTV) | 30d | 2027-01-02 | 2027-02-04 | DAR-CON-1330 |  | 25d |  |
|  | TNC | **Testing & Commissioning** |  | 2027-01-01 | 2027-04-05 |  |  |  |  |
|  | COM | **Systems Commissioning** |  | 2027-01-21 | 2027-03-21 |  |  |  |  |
| DAR-TNC-2110 |  | HVAC & chilled water commissioning | 25d | 2027-01-21 | 2027-02-14 | DAR-TNC-2010, PEW-TNC-M041 |  | 26d |  |
| DAR-TNC-2120 |  | Electrical systems commissioning | 20d | 2027-01-21 | 2027-02-09 | DAR-TNC-2010 |  | 26d |  |
| DAR-TNC-2130 |  | Fire & life safety systems commissioning | 25d | 2027-02-10 | 2027-03-06 | DAR-TNC-2120 |  | 41d |  |
| DAR-TNC-2140 |  | Show systems commissioning (AV, rigging, LED) | 25d | 2027-02-10 | 2027-03-06 | DAR-CON-1340, DAR-TNC-2120 |  | 26d |  |
| DAR-TNC-2160 |  | Vertical transportation testing & certification | 10d | 2027-02-10 | 2027-02-19 | DAR-CON-1150, DAR-TNC-2120 |  | 56d |  |
| DAR-TNC-2150 |  | BMS & ELV commissioning | 20d | 2027-02-15 | 2027-03-06 | DAR-TNC-2110 |  | 26d |  |
| DAR-TNC-2145 |  | Acoustic & broadcast performance testing | 15d | 2027-03-07 | 2027-03-21 | DAR-TNC-2140 |  | 26d |  |
| DAR-TNC-2170 |  | Security systems (CCTV, access control) commissioning | 15d | 2027-03-07 | 2027-03-21 | DAR-TNC-2150 |  | 26d |  |

| ID | WBS | Task | Duration | Start | Finish | Predecessors | Complete | Total float | Constraint |
| --- | --- | --- | --- | --- | --- | --- | --- | --- | --- |
|  | IST | **Integrated Systems Testing** |  | 2027-03-22 | 2027-04-05 |  |  |  |  |
| DAR-TNC-2210 |  | Integrated systems test (IST) | 15d | 2027-03-22 | 2027-04-05 | DAR-CON-M142, DAR-TNC-2130, DAR-TNC-2145, DAR-TNC-2150, DAR-TNC-2160, DAR-TNC-2170 |  | 26d |  |
| DAR-TNC-M220 |  | T&C complete (ICA certificate) | 0d | 2027-04-05 | 2027-04-05 | DAR-TNC-2210 |  | 26d |  |
|  | PRE | **Pre-commissioning** |  | 2027-01-01 | 2027-01-20 |  |  |  |  |
| DAR-TNC-2010 |  | Pre-commissioning checks (electrical & mechanical) | 20d | 2027-01-01 | 2027-01-20 | DAR-CON-1132, DAR-CON-1135, DAR-CON-1140, DAR-CON-1210, DAR-CON-1220, PEW-TNC-M031 |  | 26d |  |
|  | HOV | **Handover** |  | 2027-03-17 | 2027-05-31 |  |  |  |  |
|  | APR | **Authority Inspections & Approvals** |  | 2027-04-06 | 2027-05-31 |  |  |  |  |
| DAR-HOV-3110 |  | Civil defence & fire authority inspection | 15d | 2027-04-06 | 2027-04-26 | DAR-TNC-M220 |  | 18d |  |
| DAR-HOV-3120 |  | Completion certificate application & review | 20d | 2027-04-27 | 2027-05-31 | DAR-HOV-3010, DAR-HOV-3110 |  | 18d |  |
| DAR-HOV-M130 |  | Occupancy certificate issued | 0d | 2027-05-31 | 2027-05-31 | DAR-HOV-3120 |  | 18d |  |
|  | HND | **Completion & Handover** |  | 2027-04-06 | 2027-05-31 |  |  |  |  |
| DAR-HOV-3210 |  | Handover documentation (O&M, as-builts, warranties) | 25d | 2027-04-06 | 2027-05-10 | DAR-TNC-M220 |  | 68d |  |
| DAR-HOV-3220 |  | Defects walkdown with operator | 5d | 2027-04-21 | 2027-04-26 | DAR-HOV-3010 |  | 94d |  |
| DAR-HOV-M230 |  | Handover to operator | 0d | 2027-05-31 | 2027-05-31 | DAR-HOV-3210, DAR-HOV-3220, DAR-HOV-M130 |  | 69d |  |
|  | SNG | **Snagging & Defects** |  | 2027-03-17 | 2027-04-20 |  |  |  |  |
| DAR-HOV-3010 |  | Snagging & defects rectification | 30d | 2027-03-17 | 2027-04-20 | DAR-CON-M142 |  | 28d |  |
|  | OPM | **Operator Mobilisation & Training** |  | 2026-11-01 | 2027-07-28 |  |  |  |  |
|  | RCT | **Recruitment & Onboarding** |  | 2026-11-01 | 2027-05-05 |  |  |  |  |
| DAR-OPM-4010 |  | Recruitment wave 1 (leadership & technical) | 40d | 2026-11-01 | 2026-12-24 | PRG-OPM-4010 SS+20d |  | 31d | start on or after 2026-11-01 |
| DAR-OPM-4015 |  | Recruitment wave 2 (front-line staff) | 40d | 2026-12-27 | 2027-02-18 | DAR-OPM-4010 |  | 31d |  |
| DAR-OPM-4020 |  | Onboarding & induction | 20d | 2027-02-21 | 2027-03-24 | DAR-OPM-4015 |  | 31d |  |
| DAR-OPM-4030 |  | Uniforms, IT & systems provisioning | 30d | 2027-03-25 | 2027-05-05 | DAR-OPM-4020 |  | 31d |  |
|  | TRN | **Training & Familiarisation** |  | 2027-03-25 | 2027-07-28 |  |  |  |  |
| DAR-OPM-4110 |  | Classroom & simulator training | 30d | 2027-03-25 | 2027-05-05 | DAR-OPM-4020 |  | 31d |  |
| DAR-OPM-M120 |  | Operator site access granted | 0d | 2027-04-06 | 2027-04-06 | DAR-TNC-M220 |  | 64d | start on or after 2027-04-04 |
| DAR-OPM-4130 |  | On-site familiarisation & equipment training | 30d | 2027-06-01 | 2027-06-30 | DAR-HOV-M130, DAR-OPM-4030, DAR-OPM-4110, DAR-OPM-M120 |  | 24d |  |
| DAR-OPM-4140 |  | SOPs & emergency procedures validated | 20d | 2027-07-01 | 2027-07-28 | DAR-OPM-4130 |  | 16d |  |
| DAR-OPM-M150 |  | Operator trained & certified | 0d | 2027-07-28 | 2027-07-28 | DAR-OPM-4140 |  | 16d |  |
|  | OTE | **Operational Trials & Test Events** |  | 2027-07-29 | 2027-09-05 |  |  |  |  |
|  | TEV | **Test Events** |  | 2027-08-23 | 2027-09-05 |  |  |  |  |
| DAR-OTE-5110 |  | Test events (invited guests) | 14d | 2027-08-23 | 2027-09-05 | DAR-HOV-M130, DAR-OTE-5020, DAR-OTE-5030 |  | 22d |  |
|  | TRL | **Operational Trials** |  | 2027-07-29 | 2027-08-22 |  |  |  |  |
| DAR-OTE-5010 |  | Operational trials (technical rehearsals) | 20d | 2027-07-29 | 2027-08-17 | DAR-HOV-M230, DAR-OPM-M150 |  | 22d |  |
| DAR-OTE-5030 |  | Ticketing & POS systems trial | 7d | 2027-08-01 | 2027-08-07 | DAR-OPM-4030, DAR-OTE-5010 SS+3d, PRG-OTE-5010 |  | 37d |  |
| DAR-OTE-5020 |  | Emergency drills with civil defence | 5d | 2027-08-18 | 2027-08-22 | DAR-OTE-5010 |  | 22d |  |
|  | D1R | **Day 1 Readiness** |  | 2027-09-06 | 2027-09-14 |  |  |  |  |
|  | GAT | **Readiness Gates** |  | 2027-09-06 | 2027-09-14 |  |  |  |  |
| DAR-D1R-6010 |  | Operational readiness assessment | 7d | 2027-09-06 | 2027-09-14 | DAR-OTE-5110 |  | 16d |  |
| DAR-D1R-M020 |  | Asset Day 1 ready | 0d | 2027-09-14 | 2027-09-14 | DAR-D1R-6010 |  | 24d |  |
|  | PBR | **Palm Boulevard (Retail & Dining)** |  | 2026-01-10 | 2027-09-08 |  |  |  |  |
|  | CON | **Construction** |  | 2026-01-10 | 2027-03-14 |  |  |  |  |
|  | EXT | **External Works** |  | 2026-12-30 | 2027-02-14 |  |  |  |  |
| PBR-CON-1410 |  | External works & landscaping | 40d | 2026-12-30 | 2027-02-14 | PBR-CON-1040, PBR-CON-1220 |  | 24d |  |
| PBR-CON-1430 |  | Car parks & drop-off | 30d | 2027-01-11 | 2027-02-14 | PBR-CON-1010, PBR-CON-1410 FF |  | 24d |  |
| PBR-CON-M142 |  | Ready for commissioning (construction complete) | 0d | 2027-02-14 | 2027-02-14 | PBR-CON-1135, PBR-CON-1140, PBR-CON-1150, PBR-CON-1210, PBR-CON-1340, PBR-CON-1430 |  | 24d |  |
|  | FIT | **Fit-out & Finishes** |  | 2026-06-11 | 2027-03-14 |  |  |  |  |
| PBR-CON-1050 |  | Internal partitions & ceilings | 35d | 2026-06-11 | 2026-07-21 | PBR-CON-1030, PBR-CON-1040 |  | 13d |  |
| PBR-CON-1210 |  | Back-of-house fit-out | 40d | 2026-11-09 | 2026-12-24 | PBR-CON-1132 |  | 4d |  |
| PBR-CON-1220 |  | Front-of-house fit-out & finishes | 44d | 2026-11-09 | 2026-12-29 | PBR-CON-1132 |  | 0d |  |
| PBR-CON-1225 |  | FOH final finishes & joinery | 40d | 2026-12-30 | 2027-02-14 | PBR-CON-1150, PBR-CON-1220 |  | 178d |  |
| PBR-CON-1230 |  | Signage & wayfinding | 20d | 2027-02-15 | 2027-03-14 | PBR-CON-1225 |  | 178d |  |
|  | MEP | **MEP Installation** |  | 2026-04-16 | 2026-12-19 |  |  |  |  |
| PBR-CON-1110 |  | MEP first fix - lower levels | 40d | 2026-04-16 A | 2026-06-06 | PBR-CON-1020 | 30% | 1d |  |
| PBR-CON-1105 |  | Long-lead MEP plant procurement & delivery | 44d | 2026-05-02 | 2026-06-25 | PRG-D1R-M000 |  | 0d | start on or after 2026-05-02 |
| PBR-CON-1112 |  | MEP first fix - upper levels & roof plant | 40d | 2026-06-07 | 2026-07-22 | PBR-CON-1110 |  | 1d |  |
| PBR-CON-1120 |  | Main plant installation (chillers, switchgear, AHUs) | 35d | 2026-06-27 | 2026-08-05 | PBR-CON-1030, PBR-CON-1105 |  | 0d |  |
| PBR-CON-1131 |  | MEP second fix - Zone A | 40d | 2026-08-06 | 2026-09-21 | PBR-CON-1050, PBR-CON-1112, PBR-CON-1120 |  | 0d |  |
| PBR-CON-1132 |  | MEP second fix - Zone B | 40d | 2026-09-22 | 2026-11-08 | PBR-CON-1131 |  | 0d |  |
| PBR-CON-1140 |  | BMS & ELV installation | 35d | 2026-09-22 | 2026-11-02 | PBR-CON-1120, PBR-CON-1131 |  | 49d |  |
| PBR-CON-1135 |  | MEP second fix - Zone C (BOH & plant rooms) | 35d | 2026-10-11 | 2026-11-19 | PBR-CON-1132 SS+15d |  | 34d |  |
| PBR-CON-1150 |  | Vertical transportation installation | 35d | 2026-11-09 | 2026-12-19 | PBR-CON-1132 |  | 67d |  |
|  | MGT | **Management & Supervision** |  | 2026-01-10 | 2027-02-14 |  |  |  |  |
| PBR-CON-9010 |  | Construction supervision & site management (LOE) | 336d | 2026-01-10 A | 2027-02-14 | PBR-CON-1010 SS, PBR-CON-M142 FF | 27% | 24d |  |
|  | STR | **Structure & Envelope** |  | 2026-01-10 | 2026-06-10 |  |  |  |  |
| PBR-CON-1010 |  | Substructure & foundations | 40d | 2026-01-10 A | 2026-02-24 A | PRG-D1R-M000 | 100% |  | start on or after 2026-01-10 |
| PBR-CON-1020 |  | Superstructure frame | 40d | 2026-02-25 A | 2026-04-15 A | PBR-CON-1010 | 100% |  |  |
| PBR-CON-1030 |  | Roof structure & roofing | 40d | 2026-04-16 A | 2026-06-06 | PBR-CON-1020 | 30% | 17d |  |
| PBR-CON-1040 |  | Building envelope & facade | 44d | 2026-04-16 A | 2026-06-10 | PBR-CON-1020 | 27% | 13d |  |
|  | SYS | **Specialist Systems** |  | 2026-07-23 | 2027-02-10 |  |  |  |  |
| PBR-CON-1310 |  | Shell & core handover to tenants | 30d | 2026-07-23 | 2026-08-26 | PBR-CON-1112 |  | 1d |  |

| ID | WBS | Task | Duration | Start | Finish | Predecessors | Total float | Constraint |
| --- | --- | --- | --- | --- | --- | --- | --- | --- |
| PBR-CON-1320 |  | Tenant fit-out - wave 1 | 44d | 2026-09-27 | 2026-11-16 | PBR-CON-1310 FS+25d | 1d |  |
| PBR-CON-1330 |  | Tenant fit-out - wave 2 | 44d | 2026-11-17 | 2027-01-06 | PBR-CON-1320 | 1d |  |
| PBR-CON-1340 |  | Tenant fit-out - wave 3 & public realm | 30d | 2027-01-07 | 2027-02-10 | PBR-CON-1330 | 1d |  |
|  | TNC | **Testing & Commissioning** |  | 2026-12-30 | 2027-04-03 |  |  |  |
|  | COM | **Systems Commissioning** |  | 2027-01-19 | 2027-03-19 |  |  |  |
| PBR-TNC-2110 |  | HVAC & chilled water commissioning | 25d | 2027-01-19 | 2027-02-12 | PBR-TNC-2010, PEW-TNC-M041 | 0d |  |
| PBR-TNC-2120 |  | Electrical systems commissioning | 20d | 2027-01-19 | 2027-02-07 | PBR-TNC-2010 | 5d |  |
| PBR-TNC-2130 |  | Fire & life safety systems commissioning | 25d | 2027-02-08 | 2027-03-04 | PBR-TNC-2120 | 15d |  |
| PBR-TNC-2160 |  | Vertical transportation testing & certification | 10d | 2027-02-08 | 2027-02-17 | PBR-CON-1150, PBR-TNC-2120 | 30d |  |
| PBR-TNC-2140 |  | Tenant systems integration testing | 20d | 2027-02-11 | 2027-03-02 | PBR-CON-1340, PBR-TNC-2120 | 2d |  |
| PBR-TNC-2150 |  | BMS & ELV commissioning | 20d | 2027-02-13 | 2027-03-04 | PBR-TNC-2110 | 0d |  |
| PBR-TNC-2145 |  | Kitchen extract & fire suppression testing | 15d | 2027-03-03 | 2027-03-17 | PBR-TNC-2140 | 2d |  |
| PBR-TNC-2170 |  | Security systems (CCTV, access control) commissioning | 15d | 2027-03-05 | 2027-03-19 | PBR-TNC-2150 | 0d |  |
|  | IST | **Integrated Systems Testing** |  | 2027-03-20 | 2027-04-03 |  |  |  |
| PBR-TNC-2210 |  | Integrated systems test (IST) | 15d | 2027-03-20 | 2027-04-03 | PBR-CON-M142, PBR-TNC-2130, PBR-TNC-2145, PBR-TNC-2150, PBR-TNC-2160, PBR-TNC-2170 | 0d |  |
| PBR-TNC-M220 |  | T&C complete (ICA certificate) | 0d | 2027-04-03 | 2027-04-03 | PBR-TNC-2210 | 0d |  |
|  | PRE | **Pre-commissioning** |  | 2026-12-30 | 2027-01-18 |  |  |  |
| PBR-TNC-2010 |  | Pre-commissioning checks (electrical & mechanical) | 20d | 2026-12-30 | 2027-01-18 | PBR-CON-1132, PBR-CON-1135, PBR-CON-1140, PBR-CON-1210, PBR-CON-1220, PEW-TNC-M031 | 0d |  |
|  | HOV | **Handover** |  | 2027-02-15 | 2027-05-27 |  |  |  |
|  | APR | **Authority Inspections & Approvals** |  | 2027-04-04 | 2027-05-27 |  |  |  |
| PBR-HOV-3110 |  | Civil defence & fire authority inspection | 15d | 2027-04-04 | 2027-04-22 | PBR-TNC-M220 | 0d | mandatory finish 2027-04-22 |
| PBR-HOV-3120 |  | Completion certificate application & review | 20d | 2027-04-25 | 2027-05-27 | PBR-HOV-3010, PBR-HOV-3110 | 20d |  |
| PBR-HOV-M130 |  | Occupancy certificate issued | 0d | 2027-05-27 | 2027-05-27 | PBR-HOV-3120 | 20d |  |
|  | HND | **Completion & Handover** |  | 2027-03-27 | 2027-05-27 |  |  |  |
| PBR-HOV-3220 |  | Defects walkdown with operator | 5d | 2027-03-27 | 2027-03-31 | PBR-HOV-3010 | 116d |  |
| PBR-HOV-3210 |  | Handover documentation (O&M, as-builts, warranties) | 25d | 2027-04-04 | 2027-05-06 | PBR-TNC-M220 | 70d |  |
| PBR-HOV-M230 |  | Handover to operator | 0d | 2027-05-27 | 2027-05-27 | PBR-HOV-3210, PBR-HOV-3220, PBR-HOV-M130 | 72d |  |
|  | SNG | **Snagging & Defects** |  | 2027-02-15 | 2027-03-25 |  |  |  |
| PBR-HOV-3010 |  | Snagging & defects rectification | 30d | 2027-02-15 | 2027-03-25 | PBR-CON-M142 | 50d |  |
|  | OPM | **Operator Mobilisation & Training** |  | 2026-11-01 | 2027-07-22 |  |  |  |
|  | RCT | **Recruitment & Onboarding** |  | 2026-11-01 | 2027-05-05 |  |  |  |
| PBR-OPM-4010 |  | Recruitment wave 1 (leadership & technical) | 40d | 2026-11-01 | 2026-12-24 | PRG-OPM-4010 SS+20d | 31d | start on or after 2026-11-01 |
| PBR-OPM-4015 |  | Recruitment wave 2 (front-line staff) | 40d | 2026-12-27 | 2027-02-18 | PBR-OPM-4010 | 31d |  |
| PBR-OPM-4020 |  | Onboarding & induction | 20d | 2027-02-21 | 2027-03-24 | PBR-OPM-4015 | 31d |  |
| PBR-OPM-4030 |  | Uniforms, IT & systems provisioning | 30d | 2027-03-25 | 2027-05-05 | PBR-OPM-4020 | 31d |  |
|  | TRN | **Training & Familiarisation** |  | 2027-03-25 | 2027-07-22 |  |  |  |
| PBR-OPM-4110 |  | Classroom & simulator training | 30d | 2027-03-25 | 2027-05-05 | PBR-OPM-4020 | 31d |  |
| PBR-OPM-M120 |  | Operator site access granted | 0d | 2027-04-04 | 2027-04-04 | PBR-TNC-M220 | 66d |  |
| PBR-OPM-4130 |  | On-site familiarisation & equipment training | 30d | 2027-05-28 | 2027-06-26 | PBR-HOV-M130, PBR-OPM-4030, PBR-OPM-4110, PBR-OPM-M120 | 28d |  |
| PBR-OPM-4140 |  | SOPs & emergency procedures validated | 20d | 2027-06-27 | 2027-07-22 | PBR-OPM-4130 | 20d |  |
| PBR-OPM-M150 |  | Operator trained & certified | 0d | 2027-07-22 | 2027-07-22 | PBR-OPM-4140 | 20d |  |
|  | OTE | **Operational Trials & Test Events** |  | 2027-07-23 | 2027-08-30 |  |  |  |
|  | TEV | **Test Events** |  | 2027-08-17 | 2027-08-30 |  |  |  |
| PBR-OTE-5110 |  | Test events (invited guests) | 14d | 2027-08-17 | 2027-08-30 | PBR-HOV-M130, PBR-OTE-5020, PBR-OTE-5030 | 28d |  |
|  | TRL | **Operational Trials** |  | 2027-07-23 | 2027-08-16 |  |  |  |
| PBR-OTE-5010 |  | Operational trials (technical rehearsals) | 20d | 2027-07-23 | 2027-08-11 | PBR-HOV-M230, PBR-OPM-M150 | 28d |  |
| PBR-OTE-5030 |  | Ticketing & POS systems trial | 7d | 2027-07-26 | 2027-08-01 | PBR-OPM-4030, PBR-OTE-5010 SS+3d, PRG-OTE-5010 | 43d |  |
| PBR-OTE-5020 |  | Emergency drills with civil defence | 5d | 2027-08-12 | 2027-08-16 | PBR-OTE-5010 | 28d |  |
|  | D1R | **Day 1 Readiness** |  | 2027-08-31 | 2027-09-08 |  |  |  |
|  | GAT | **Readiness Gates** |  | 2027-08-31 | 2027-09-08 |  |  |  |
| PBR-D1R-6010 |  | Operational readiness assessment | 7d | 2027-08-31 | 2027-09-08 | PBR-OTE-5110 | 20d |  |
| PBR-D1R-M020 |  | Asset Day 1 ready | 0d | 2027-09-08 | 2027-09-08 | PBR-D1R-6010 | 30d |  |
|  | PEW | **Programme Enabling Works** |  | 2026-07-04 | 2027-08-22 |  |  |  |
|  | CON | **Construction** |  | 2026-07-04 | 2027-06-28 |  |  |  |
|  | CLG | **District Cooling** |  | 2026-09-05 | 2026-12-23 |  |  |  |
| PEW-CON-1050 |  | District cooling plant - civil & structure | 44d | 2026-09-05 | 2026-10-26 | PRG-D1R-M000 | 5d | start on or after 2026-09-05 |
| PEW-CON-1060 |  | District cooling plant - chillers & pumps installation | 44d | 2026-10-27 | 2026-12-16 | PEW-CON-1050 | 5d |  |
| PEW-CON-1070 |  | Chilled water distribution network | 40d | 2026-11-08 | 2026-12-23 | PEW-CON-1060 SS+10d | 5d |  |
|  | ICT | **Telecom & ICT** |  | 2026-11-18 | 2026-12-28 |  |  |  |
| PEW-CON-1170 |  | Telecom & ICT backbone | 35d | 2026-11-18 | 2026-12-28 | PEW-CON-1080 | 194d |  |
|  | MGT | **Management & Supervision** |  | 2026-08-01 | 2027-06-28 |  |  |  |
| PEW-CON-9010 |  | Enabling works supervision (LOE) | 275d | 2026-08-01 | 2027-06-28 | PEW-CON-1010 SS, PEW-CON-1150 FF | 28d |  |
|  | PWR | **Power** |  | 2026-08-01 | 2026-11-07 |  |  |  |
| PEW-CON-1010 |  | Main substation civil works | 40d | 2026-08-01 | 2026-09-15 | PRG-D1R-M000 | 4d | start on or after 2026-08-01 |
| PEW-CON-1020 |  | Main substation building & equipment installation | 44d | 2026-09-16 | 2026-11-07 | PEW-CON-1010 | 4d |  |
| PEW-CON-1030 |  | HV cabling | 40d | 2026-09-16 | 2026-11-02 | PEW-CON-1010 | 16d |  |
| PEW-CON-1040 |  | HV cabling | 44d | 2026-09-16 | 2026-11-07 | PEW-CON-1010 | 36d |  |
|  | RDS | **Roads** |  | 2026-07-04 | 2026-10-10 |  |  |  |
| PEW-CON-1110 |  | Primary access road & junctions | 44d | 2026-07-04 | 2026-08-23 | PRG-D1R-M000 | 252d | start on or after 2026-07-04 |
| PEW-CON-1120 |  | Internal roads, lighting & signage | 35d | 2026-08-24 | 2026-10-04 | PEW-CON-1110 | 252d |  |

| ID | WBS | Task | Duration | Start | Finish | Predecessors | Complete | Total float | Constraint |
| --- | --- | --- | --- | --- | --- | --- | --- | --- | --- |
| PEW-CON-1160 |  | Transport hub & car park structure | 40d | 2026-08-24 | 2026-10-10 | PEW-CON-1110 |  | 290d |  |
|  | TRS | **Transit** |  | 2027-01-02 | 2027-06-28 |  |  |  |  |
| PEW-CON-1130 |  | Transit link guideway & stations | 100d | 2027-01-02 | 2027-05-02 | PRG-D1R-M000 |  | 28d | start on or after 2027-01-02 |
| PEW-CON-1150 |  | Transit systems installation (track, power, signalling) | 44d | 2027-05-03 | 2027-06-28 | PEW-CON-1130 |  | 28d |  |
|  | WAT | **Water & Drainage** |  | 2026-10-03 | 2026-12-28 |  |  |  |  |
| PEW-CON-1080 |  | Potable & irrigation water network | 40d | 2026-10-03 | 2026-11-17 | PRG-D1R-M000 |  | 179d | start on or after 2026-10-03 |
| PEW-CON-1090 |  | Sewer & stormwater network | 35d | 2026-11-18 | 2026-12-28 | PEW-CON-1080 |  | 179d |  |
|  | TNC | **Testing & Commissioning** |  | 2026-11-08 | 2027-07-23 |  |  |  |  |
|  | CLG | **District Cooling** |  | 2026-12-24 | 2027-01-12 |  |  |  |  |
| PEW-TNC-2040 |  | District cooling commissioning | 20d | 2026-12-24 | 2027-01-12 | PEW-CON-1060, PEW-CON-1070, PEW-TNC-2020 |  | 6d |  |
| PEW-TNC-M041 |  | District cooling available | 0d | 2027-01-12 | 2027-01-12 | PEW-TNC-2040 |  | 6d |  |
|  | ICT | **Telecom & ICT** |  | 2026-12-29 | 2027-01-07 |  |  |  |  |
| PEW-TNC-2060 |  | Telecom backbone commissioning | 10d | 2026-12-29 | 2027-01-07 | PEW-CON-1170 |  | 237d |  |
|  | PWR | **Power** |  | 2026-11-08 | 2026-11-27 |  |  |  |  |
| PEW-TNC-2010 |  | Main substation energisation | 10d | 2026-11-08 | 2026-11-17 | PEW-CON-1020 |  | 4d |  |
| PEW-TNC-2020 |  | South loop HV commissioning & energisation | 10d | 2026-11-18 | 2026-11-27 | PEW-CON-1030, PEW-TNC-2010 |  | 4d |  |
| PEW-TNC-2030 |  | North loop HV commissioning & energisation | 10d | 2026-11-18 | 2026-11-27 | PEW-CON-1040, PEW-TNC-2010 |  | 32d |  |
| PEW-TNC-M021 |  | Permanent power available - South loop | 0d | 2026-11-27 | 2026-11-27 | PEW-TNC-2020 |  | 4d |  |
| PEW-TNC-M031 |  | Permanent power available - North loop | 0d | 2026-11-27 | 2026-11-27 | PEW-TNC-2030 |  | 32d |  |
|  | TRS | **Transit** |  | 2027-06-24 | 2027-07-23 |  |  |  |  |
| PEW-TNC-2070 |  | Transit system dynamic testing | 30d | 2027-06-24 | 2027-07-23 | PEW-CON-1150 FS-5d, PEW-TNC-2030 |  | 33d |  |
| PEW-TNC-M071 |  | Transit ready for trial running | 0d | 2027-07-23 | 2027-07-23 | PEW-TNC-2070 |  | 33d |  |
|  | WAT | **Water & Drainage** |  | 2026-11-18 | 2026-11-27 |  |  |  |  |
| PEW-TNC-2050 |  | Water network testing & disinfection | 10d | 2026-11-18 | 2026-11-27 | PEW-CON-1080 |  | 236d |  |
|  | HOV | **Handover** |  | 2026-10-05 | 2027-08-19 |  |  |  |  |
|  | APR | **Authority Inspections & Approvals** |  | 2026-10-05 | 2027-08-19 |  |  |  |  |
| PEW-HOV-3020 |  | Road authority inspection & handover | 10d | 2026-10-05 | 2026-10-18 | PEW-CON-1120 |  | 249d |  |
| PEW-HOV-3010 |  | Utility authority acceptance & handover | 15d | 2027-01-13 | 2027-02-02 | PEW-TNC-2020, PEW-TNC-2030, PEW-TNC-2040, PEW-TNC-2050 FS+30d, PEW-TNC-2060 |  | 157d |  |
| PEW-HOV-3030 |  | Transit operating certificate | 20d | 2027-07-25 | 2027-08-19 | PEW-TNC-M071 |  | 24d |  |
| PEW-HOV-M040 |  | Enabling works handover complete | 0d | 2027-08-19 | 2027-08-19 | PEW-CON-1090, PEW-CON-1160, PEW-HOV-3010, PEW-HOV-3030 |  | 24d |  |
|  | OPM | **Operator Mobilisation & Training** |  | 2027-01-03 | 2027-02-28 |  |  |  |  |
|  | RCT | **Recruitment & Onboarding** |  | 2027-01-03 | 2027-02-28 |  |  |  |  |
| PEW-OPM-4010 |  | Transit operator recruitment & training | 40d | 2027-01-03 | 2027-02-28 | PRG-D1R-M000, PRG-OPM-4005 |  | 124d | start on or after 2027-01-03 |
|  | OTE | **Operational Trials & Test Events** |  | 2027-07-19 | 2027-08-22 |  |  |  |  |
|  | TRL | **Operational Trials** |  | 2027-07-19 | 2027-08-22 |  |  |  |  |
| PEW-OTE-5020 |  | Traffic management & wayfinding trials | 10d | 2027-07-19 | 2027-07-28 | PEW-CON-1120, PEW-OTE-5010 SF+5d |  | 72d |  |
| PEW-OTE-5010 |  | Transit trial running (shadow operation) | 30d | 2027-07-24 | 2027-08-22 | PEW-OPM-4010, PEW-TNC-M071 |  | 39d |  |
|  | D1R | **Day 1 Readiness** |  |  |  |  |  |  |  |
|  | PRG | **Programme Integration & Day 1** |  | 2025-03-02 | 2027-09-21 |  |  |  |  |
|  | CON | **Construction** |  |  |  |  |  |  |  |
|  | TNC | **Testing & Commissioning** |  |  |  |  |  |  |  |
|  | HOV | **Handover** |  |  |  |  |  |  |  |
|  | OPM | **Operator Mobilisation & Training** |  | 2026-03-01 | 2027-09-02 |  |  |  |  |
|  | RCT | **Recruitment & Onboarding** |  | 2026-03-01 | 2027-07-08 |  |  |  |  |
| PRG-OPM-4005 |  | Operator executive team mobilisation | 20d | 2026-03-01 A | 2026-03-30 A | PRG-D1R-M000 | 100% |  | start on or after 2026-03-01 |
| PRG-OPM-4010 |  | Destination-wide recruitment campaign | 100d | 2026-03-31 A | 2026-08-20 | PRG-OPM-4005 | 22% | 138d |  |
| PRG-OPM-4030 |  | FM mobilisation & maintenance contracts live | 40d | 2027-03-31 | 2027-06-01 | PRG-D1R-M010 SS |  | 86d |  |
| PRG-OPM-4050 |  | Destination operating permits & licences | 25d | 2027-06-06 | 2027-07-08 | PRG-OPM-4005 |  | 64d | start on or after 2027-06-06 |
|  | TRN | **Training & Familiarisation** |  | 2026-08-23 | 2027-09-02 |  |  |  |  |
| PRG-OPM-4020 |  | Service culture & guest-experience training | 30d | 2026-08-23 | 2026-10-04 | PRG-OPM-4010 |  | 182d |  |
| PRG-OPM-4060 |  | Guest services & contact centre readiness | 20d | 2026-10-05 | 2026-11-01 | PRG-OPM-4020 |  | 182d |  |
| PRG-OPM-4040 |  | Security & safety operational readiness accreditation | 30d | 2027-07-25 | 2027-09-02 | PRG-D1R-M020 |  | 24d |  |
|  | OTE | **Operational Trials & Test Events** |  | 2027-04-04 | 2027-09-13 |  |  |  |  |
|  | TEV | **Test Events** |  | 2027-09-06 | 2027-09-13 |  |  |  |  |
| PRG-OTE-5020 |  | Integrated destination test event (all assets) | 5d | 2027-09-06 | 2027-09-10 | DAR-OTE-5110, LWP-OTE-5110, MTP-OTE-5110, PBR-OTE-5110, PEW-OTE-5010, PRG-OPM-4030, PRG-OTE-5010 |  | 25d |  |
| PRG-OTE-5030 |  | Opening ceremony operational rehearsal | 3d | 2027-09-11 | 2027-09-13 | PRG-OTE-5020 |  | 25d |  |
|  | TRL | **Operational Trials** |  | 2027-04-04 | 2027-05-13 |  |  |  |  |
| PRG-OTE-5010 |  | Destination ticketing, CRM & IT go-live | 30d | 2027-04-04 | 2027-05-13 | PRG-OPM-4060 |  | 77d | start on or after 2027-04-04 |
|  | D1R | **Day 1 Readiness** |  | 2025-03-02 | 2027-09-21 |  |  |  |  |
|  | GAT | **Readiness Gates** |  | 2025-03-02 | 2027-09-21 |  |  |  |  |
| PRG-D1R-M000 |  | Programme notice to proceed | 0d | 2025-03-02 A | 2025-03-02 A |  | 100% |  |  |
| PRG-D1R-M010 |  | RG1 Construction complete gate | 0d | 2027-03-30 | 2027-03-30 | DAR-CON-M142, LWP-CON-M142, MTP-CON-M142, PBR-CON-M142, PEW-CON-1090, PEW-CON-1120 |  | 127d |  |
| PRG-D1R-M020 |  | RG2 T&C complete gate | 0d | 2027-07-23 | 2027-07-23 | DAR-TNC-M220, LWP-TNC-M220, MTP-TNC-M220, PBR-TNC-M220, PEW-TNC-M071 |  | 33d |  |
| PRG-D1R-M030 |  | RG3 Ready to operate gate | 0d | 2027-08-19 | 2027-08-19 | DAR-HOV-M230, DAR-OPM-M150, LWP-HOV-M230, LWP-OPM-M150, MTP-HOV-M230, MTP-OPM-M150, PBR-HOV-M230, PBR-OPM-M150, PEW-HOV-M040 |  | 35d |  |
| PRG-D1R-6020 |  | Day 1 command centre & hypercare set-up | 15d | 2027-08-20 | 2027-09-03 | PRG-D1R-M030 |  | 35d |  |
| PRG-D1R-6010 |  | Day 1 go/no-go readiness review | 5d | 2027-09-15 | 2027-09-21 | DAR-D1R-M020, LWP-D1R-M020, MTP-D1R-M020, PBR-D1R-M020, PEW-OTE-5020, PRG-D1R-6020, PRG-OPM-4040, PRG-OPM-4050, PRG-OTE-5030 |  | 16d |  |
| PRG-D1R-M040 |  | RG4 Day 1 go/no-go gate | 0d | 2027-09-21 | 2027-09-21 | PRG-D1R-6010 |  | 22d |  |
| PRG-D1R-M999 |  | Day 1 Opening | 0d | 2027-09-21 | 2027-09-21 | PRG-D1R-M040 |  | 22d | finish on or before 2027-10-14 |
|  | MGT | **Management & Supervision** |  | 2025-03-02 | 2027-09-21 |  |  |  |  |
| PRG-D1R-9010 |  | Programme management & controls (LOE) | 645d | 2025-03-02 A | 2027-09-21 | PRG-D1R-M000 SS, PRG-D1R-M999 FF | 46% | 16d |  |

## Version 2 (data date 2026-05-28, saved 2026-05-28, file DOP_UPD_2026-05-28.xer)

Note of the change: Destination Opening Programme: schedule intelligence

Last finish 2027-09-21 → 2027-09-30 (+9d). Complete tasks 14 → 16.

Changed:

| ID | Task | Start | Finish | Duration | Complete | Total float |
| --- | --- | --- | --- | --- | --- | --- |
| MTP-CON-1105 | Long-lead MEP plant procurement & delivery |  | 2026-05-24 A |  | 52% → 100% | 0d → none |
| MTP-CON-1120 | Main plant installation (chillers, switchgear, AHUs) | 2026-05-25 A |  |  | 0% → 3% |  |
| MTP-CON-9010 | Construction supervision & site management (LOE) |  |  |  | 41% → 47% |  |
| SYS | **Specialist Systems** |  | 2026-11-29 → 2026-12-03 (+4d) |  |  |  |
| MTP-CON-1310 | Ride systems installation (all rides) |  | 2026-07-18 → 2026-07-22 (+4d) | 110d → 114d | 42% → 60% | 32d → 28d |
| MTP-CON-1320 | Ride control systems & ride enclosures | 2026-07-19 → 2026-07-23 (+4d) | 2026-09-02 → 2026-09-07 (+5d) |  |  | 32d → 28d |
| MTP-CON-1330 | Theming & show elements | 2026-09-03 → 2026-09-08 (+5d) | 2026-10-25 → 2026-10-29 (+4d) |  |  | 36d → 32d |
| MTP-CON-1340 | Ride & show control integration | 2026-10-26 → 2026-10-31 (+5d) | 2026-11-29 → 2026-12-03 (+4d) |  |  | 36d → 32d |
| LWP-CON-1105 | Long-lead MEP plant procurement & delivery | 2026-05-02 A |  |  | 0% → 48% |  |
| LWP-CON-1110 | MEP first fix - lower levels | 2026-05-12 A |  |  | 0% → 27% |  |
| LWP-CON-9010 | Construction supervision & site management (LOE) |  |  |  | 21% → 27% |  |
| LWP-CON-1020 | Superstructure frame |  | 2026-05-11 A |  | 77% → 100% | 24d → none |
| LWP-CON-1030 | Roof structure & roofing | 2026-05-12 A |  |  | 0% → 30% |  |
| LWP-CON-1040 | Building envelope & facade | 2026-05-12 A |  |  | 0% → 27% |  |
| DAR | **Dune Arena** |  | 2027-09-14 → 2027-09-22 (+8d) |  |  |  |
| CON | **Construction** |  | 2027-03-16 → 2027-03-25 (+9d) |  |  |  |
| EXT | **External Works** | 2027-01-02 → 2027-01-11 (+9d) | 2027-03-16 → 2027-03-25 (+9d) |  |  |  |
| DAR-CON-1410 | External works & landscaping | 2027-01-02 → 2027-01-11 (+9d) | 2027-02-16 → 2027-02-27 (+11d) |  |  | 46d → 38d |
| DAR-CON-1430 | Car parks & drop-off | 2027-01-13 → 2027-01-23 (+10d) | 2027-02-16 → 2027-02-27 (+11d) |  |  | 46d → 38d |
| DAR-CON-M142 | Ready for commissioning (construction complete) | 2027-03-16 → 2027-03-25 (+9d) | 2027-03-16 → 2027-03-25 (+9d) |  |  | 26d → 18d |
| FIT | **Fit-out & Finishes** |  | 2027-03-16 → 2027-03-25 (+9d) |  |  |  |
| DAR-CON-1210 | Back-of-house fit-out | 2026-11-11 → 2026-11-21 (+10d) | 2026-12-27 → 2027-01-05 (+9d) |  |  | 26d → 18d |
| DAR-CON-1220 | Front-of-house fit-out & finishes | 2026-11-11 → 2026-11-21 (+10d) | 2026-12-31 → 2027-01-10 (+10d) |  |  | 22d → 14d |
| DAR-CON-1225 | FOH final finishes & joinery | 2027-01-02 → 2027-01-11 (+9d) | 2027-02-16 → 2027-02-27 (+11d) |  |  | 26d → 18d |
| DAR-CON-1230 | Signage & wayfinding | 2027-02-17 → 2027-02-28 (+11d) | 2027-03-16 → 2027-03-25 (+9d) |  |  | 26d → 18d |
| MEP | **MEP Installation** |  | 2026-12-21 → 2026-12-30 (+9d) |  |  |  |
| DAR-CON-1105 | Long-lead MEP plant procurement & delivery |  | 2026-05-24 → 2026-06-11 (+18d) | 44d → 56d | 52% → 80% | 48d → 36d |
| DAR-CON-1110 | MEP first fix - lower levels |  | 2026-06-22 → 2026-07-01 (+9d) | 44d → 52d | 5% → 46% | 22d → 14d |
| DAR-CON-1120 | Main plant installation (chillers, switchgear, AHUs) | 2026-06-18 → 2026-06-23 (+5d) | 2026-07-28 → 2026-08-02 (+5d) |  |  | 31d → 27d |
| DAR-CON-1112 | MEP first fix - upper levels & roof plant | 2026-06-23 → 2026-07-02 (+9d) | 2026-08-08 → 2026-08-17 (+9d) |  |  | 22d → 14d |
| DAR-CON-1131 | MEP second fix | 2026-08-09 → 2026-08-18 (+9d) | 2026-09-24 → 2026-10-04 (+10d) |  |  | 22d → 14d |
| DAR-CON-1132 | MEP second fix | 2026-09-26 → 2026-10-05 (+9d) | 2026-11-10 → 2026-11-19 (+9d) |  |  | 22d → 14d |
| DAR-CON-1140 | BMS & ELV installation | 2026-09-26 → 2026-10-05 (+9d) | 2026-11-04 → 2026-11-14 (+10d) |  |  | 71d → 63d |
| DAR-CON-1135 | MEP second fix - Zone C (BOH & plant rooms) | 2026-10-13 → 2026-10-22 (+9d) | 2026-11-22 → 2026-12-01 (+9d) |  |  | 56d → 48d |
| DAR-CON-1150 | Vertical transportation installation | 2026-11-11 → 2026-11-21 (+10d) | 2026-12-21 → 2026-12-30 (+9d) |  |  | 35d → 27d |
| MGT | **Management & Supervision** |  | 2027-03-16 → 2027-03-25 (+9d) |  |  |  |
| DAR-CON-9010 | Construction supervision & site management (LOE) |  | 2027-03-16 → 2027-03-25 (+9d) | 352d → 360d | 24% → 30% | 26d → 18d |
| DAR-CON-1030 | Roof structure & roofing |  | 2026-06-17 → 2026-06-22 (+5d) | 40d → 44d | 5% → 55% | 31d → 27d |
| DAR-CON-1040 | Building envelope & facade |  |  |  | 5% → 55% |  |
| SYS | **Specialist Systems** | 2026-08-09 → 2026-08-18 (+9d) | 2027-02-04 → 2027-02-14 (+10d) |  |  |  |
| DAR-CON-1310 | Seating bowl & retractable seating | 2026-08-09 → 2026-08-18 (+9d) | 2026-09-29 → 2026-10-08 (+9d) |  |  | 25d → 17d |
| DAR-CON-1320 | Show systems (AV, rigging, LED) installation | 2026-09-30 → 2026-10-10 (+10d) | 2026-11-15 → 2026-11-24 (+9d) |  |  | 25d → 17d |
| DAR-CON-1330 | Premium suites & hospitality fit-out | 2026-11-16 → 2026-11-25 (+9d) | 2026-12-31 → 2027-01-10 (+10d) |  |  | 25d → 17d |
| DAR-CON-1340 | Venue technology integration (ticketing, broadcast, IPTV) | 2027-01-02 → 2027-01-11 (+9d) | 2027-02-04 → 2027-02-14 (+10d) |  |  | 25d → 17d |
| TNC | **Testing & Commissioning** | 2027-01-01 → 2027-01-11 (+10d) | 2027-04-05 → 2027-04-15 (+10d) |  |  |  |
| COM | **Systems Commissioning** | 2027-01-21 → 2027-01-31 (+10d) | 2027-03-21 → 2027-03-31 (+10d) |  |  |  |
| DAR-TNC-2110 | HVAC & chilled water commissioning | 2027-01-21 → 2027-01-31 (+10d) | 2027-02-14 → 2027-02-24 (+10d) |  |  | 26d → 16d |
| DAR-TNC-2120 | Electrical systems commissioning | 2027-01-21 → 2027-01-31 (+10d) | 2027-02-09 → 2027-02-19 (+10d) |  |  | 26d → 16d |
| DAR-TNC-2130 | Fire & life safety systems commissioning | 2027-02-10 → 2027-02-20 (+10d) | 2027-03-06 → 2027-03-16 (+10d) |  |  | 41d → 31d |
| DAR-TNC-2140 | Show systems commissioning (AV, rigging, LED) | 2027-02-10 → 2027-02-20 (+10d) | 2027-03-06 → 2027-03-16 (+10d) |  |  | 26d → 16d |
| DAR-TNC-2160 | Vertical transportation testing & certification | 2027-02-10 → 2027-02-20 (+10d) | 2027-02-19 → 2027-03-01 (+10d) |  |  | 56d → 46d |
| DAR-TNC-2150 | BMS & ELV commissioning | 2027-02-15 → 2027-02-25 (+10d) | 2027-03-06 → 2027-03-16 (+10d) |  |  | 26d → 16d |
| DAR-TNC-2145 | Acoustic & broadcast performance testing | 2027-03-07 → 2027-03-17 (+10d) | 2027-03-21 → 2027-03-31 (+10d) |  |  | 26d → 16d |
| DAR-TNC-2170 | Security systems (CCTV, access control) commissioning | 2027-03-07 → 2027-03-17 (+10d) | 2027-03-21 → 2027-03-31 (+10d) |  |  | 26d → 16d |
| IST | **Integrated Systems Testing** | 2027-03-22 → 2027-04-01 (+10d) | 2027-04-05 → 2027-04-15 (+10d) |  |  |  |
| DAR-TNC-2210 | Integrated systems test (IST) | 2027-03-22 → 2027-04-01 (+10d) | 2027-04-05 → 2027-04-15 (+10d) |  |  | 26d → 16d |
| DAR-TNC-M220 | T&C complete (ICA certificate) | 2027-04-05 → 2027-04-15 (+10d) | 2027-04-05 → 2027-04-15 (+10d) |  |  | 26d → 16d |
| PRE | **Pre-commissioning** | 2027-01-01 → 2027-01-11 (+10d) | 2027-01-20 → 2027-01-30 (+10d) |  |  |  |
| DAR-TNC-2010 | Pre-commissioning checks (electrical & mechanical) | 2027-01-01 → 2027-01-11 (+10d) | 2027-01-20 → 2027-01-30 (+10d) |  |  | 26d → 16d |
| HOV | **Handover** | 2027-03-17 → 2027-03-27 (+10d) | 2027-05-31 → 2027-06-10 (+10d) |  |  |  |
| APR | **Authority Inspections & Approvals** | 2027-04-06 → 2027-04-18 (+12d) | 2027-05-31 → 2027-06-10 (+10d) |  |  |  |
| DAR-HOV-3110 | Civil defence & fire authority inspection | 2027-04-06 → 2027-04-18 (+12d) | 2027-04-26 → 2027-05-06 (+10d) |  |  | 18d → 10d |
| DAR-HOV-3120 | Completion certificate application & review | 2027-04-27 → 2027-05-09 (+12d) | 2027-05-31 → 2027-06-10 (+10d) |  |  | 18d → 10d |
| DAR-HOV-M130 | Occupancy certificate issued | 2027-05-31 → 2027-06-10 (+10d) | 2027-05-31 → 2027-06-10 (+10d) |  |  | 18d → 10d |
| HND | **Completion & Handover** | 2027-04-06 → 2027-04-18 (+12d) | 2027-05-31 → 2027-06-10 (+10d) |  |  |  |
| DAR-HOV-3210 | Handover documentation (O&M, as-builts, warranties) | 2027-04-06 → 2027-04-18 (+12d) | 2027-05-10 → 2027-05-27 (+17d) |  |  | 68d → 60d |
| DAR-HOV-3220 | Defects walkdown with operator | 2027-04-21 → 2027-05-01 (+10d) | 2027-04-26 → 2027-05-05 (+9d) |  |  | 94d → 86d |
| DAR-HOV-M230 | Handover to operator | 2027-05-31 → 2027-06-10 (+10d) | 2027-05-31 → 2027-06-10 (+10d) |  |  | 69d → 60d |
| SNG | **Snagging & Defects** | 2027-03-17 → 2027-03-27 (+10d) | 2027-04-20 → 2027-04-29 (+9d) |  |  |  |
| DAR-HOV-3010 | Snagging & defects rectification | 2027-03-17 → 2027-03-27 (+10d) | 2027-04-20 → 2027-04-29 (+9d) |  |  | 28d → 20d |

| ID | Task | Start | Finish | Duration | Complete | Total float |
| --- | --- | --- | --- | --- | --- | --- |
| OPM | **Operator Mobilisation & Training** |  | 2027-07-28 → 2027-08-05 (+8d) |  |  |  |
| TRN | **Training & Familiarisation** |  | 2027-07-28 → 2027-08-05 (+8d) |  |  |  |
| DAR-OPM-M120 | Operator site access granted | 2027-04-06 → 2027-04-17 (+11d) | 2027-04-06 → 2027-04-17 (+11d) |  |  | 64d → 55d |
| DAR-OPM-4130 | On-site familiarisation & equipment training | 2027-06-01 → 2027-06-11 (+10d) | 2027-06-30 → 2027-07-10 (+10d) |  |  | 24d → 14d |
| DAR-OPM-4140 | SOPs & emergency procedures validated | 2027-07-01 → 2027-07-11 (+10d) | 2027-07-28 → 2027-08-05 (+8d) |  |  | 16d → 10d |
| DAR-OPM-M150 | Operator trained & certified | 2027-07-28 → 2027-08-05 (+8d) | 2027-07-28 → 2027-08-05 (+8d) |  |  | 16d → 10d |
| OTE | **Operational Trials & Test Events** | 2027-07-29 → 2027-08-06 (+8d) | 2027-09-05 → 2027-09-13 (+8d) |  |  |  |
| TEV | **Test Events** | 2027-08-23 → 2027-08-31 (+8d) | 2027-09-05 → 2027-09-13 (+8d) |  |  |  |
| DAR-OTE-5110 | Test events (invited guests) | 2027-08-23 → 2027-08-31 (+8d) | 2027-09-05 → 2027-09-13 (+8d) |  |  | 22d → 14d |
| TRL | **Operational Trials** | 2027-07-29 → 2027-08-06 (+8d) | 2027-08-22 → 2027-08-30 (+8d) |  |  |  |
| DAR-OTE-5010 | Operational trials (technical rehearsals) | 2027-07-29 → 2027-08-06 (+8d) | 2027-08-17 → 2027-08-25 (+8d) |  |  | 22d → 14d |
| DAR-OTE-5030 | Ticketing & POS systems trial | 2027-08-01 → 2027-08-09 (+8d) | 2027-08-07 → 2027-08-15 (+8d) |  |  | 37d → 29d |
| DAR-OTE-5020 | Emergency drills with civil defence | 2027-08-18 → 2027-08-26 (+8d) | 2027-08-22 → 2027-08-30 (+8d) |  |  | 22d → 14d |
| D1R | **Day 1 Readiness** | 2027-09-06 → 2027-09-14 (+8d) | 2027-09-14 → 2027-09-22 (+8d) |  |  |  |
| GAT | **Readiness Gates** | 2027-09-06 → 2027-09-14 (+8d) | 2027-09-14 → 2027-09-22 (+8d) |  |  |  |
| DAR-D1R-6010 | Operational readiness assessment | 2027-09-06 → 2027-09-14 (+8d) | 2027-09-14 → 2027-09-22 (+8d) |  |  | 16d → 10d |
| DAR-D1R-M020 | Asset Day 1 ready | 2027-09-14 → 2027-09-22 (+8d) | 2027-09-14 → 2027-09-22 (+8d) |  |  | 24d → 16d |
| PBR-CON-1110 | MEP first fix - lower levels |  |  |  | 30% → 85% |  |
| PBR-CON-1105 | Long-lead MEP plant procurement & delivery | 2026-05-02 A |  |  | 0% → 48% |  |
| PBR-CON-9010 | Construction supervision & site management (LOE) |  |  |  | 27% → 34% |  |
| PBR-CON-1030 | Roof structure & roofing |  |  |  | 30% → 85% |  |
| PBR-CON-1040 | Building envelope & facade |  |  |  | 27% → 77% |  |
| PRG | **Programme Integration & Day 1** |  | 2027-09-21 → 2027-09-30 (+9d) |  |  |  |
| PRG-OPM-4010 | Destination-wide recruitment campaign |  |  |  | 22% → 40% | 138d → 120d |
| OTE | **Operational Trials & Test Events** |  | 2027-09-13 → 2027-09-21 (+8d) |  |  |  |
| TEV | **Test Events** | 2027-09-06 → 2027-09-14 (+8d) | 2027-09-13 → 2027-09-21 (+8d) |  |  |  |
| PRG-OTE-5020 | Integrated destination test event (all assets) | 2027-09-06 → 2027-09-14 (+8d) | 2027-09-10 → 2027-09-18 (+8d) |  |  | 25d → 17d |
| PRG-OTE-5030 | Opening ceremony operational rehearsal | 2027-09-11 → 2027-09-19 (+8d) | 2027-09-13 → 2027-09-21 (+8d) |  |  | 25d → 17d |
| D1R | **Day 1 Readiness** |  | 2027-09-21 → 2027-09-30 (+9d) |  |  |  |
| GAT | **Readiness Gates** |  | 2027-09-21 → 2027-09-30 (+9d) |  |  |  |
| PRG-D1R-6010 | Day 1 go/no-go readiness review | 2027-09-15 → 2027-09-26 (+11d) | 2027-09-21 → 2027-09-30 (+9d) |  |  | 16d → 10d |
| PRG-D1R-M040 | RG4 Day 1 go/no-go gate | 2027-09-21 → 2027-09-30 (+9d) | 2027-09-21 → 2027-09-30 (+9d) |  |  | 22d → 14d |
| PRG-D1R-M999 | Day 1 Opening | 2027-09-21 → 2027-09-30 (+9d) | 2027-09-21 → 2027-09-30 (+9d) |  |  | 22d → 14d |
| MGT | **Management & Supervision** |  | 2027-09-21 → 2027-09-30 (+9d) |  |  |  |
| PRG-D1R-9010 | Programme management & controls (LOE) |  | 2027-09-21 → 2027-09-30 (+9d) | 645d → 651d | 46% → 48% | 16d → 10d |

## Version 3 (data date 2026-06-25, saved 2026-06-25, file DOP_UPD_2026-06-25.xer)

Note of the change: feat(data): synthetic integrated master schedule, storyline, progress simulation and P6 XER export

Last finish stays 2027-09-30. Complete tasks 16 → 22.

Added:

| ID | Task | Duration | Start | Finish | Predecessors |
| --- | --- | --- | --- | --- | --- |
| DAR-CON-1240 | Additional acoustic treatment - seating bowl | 15d | 2026-10-04 | 2026-10-20 | DAR-CON-1131 |

Changed:

| ID | Task | Start | Finish | Duration | Complete | Total float | Predecessors |
| --- | --- | --- | --- | --- | --- | --- | --- |
| MTP-CON-1120 | Main plant installation (chillers, switchgear, AHUs) |  |  |  | 3% → 66% |  |  |
| MTP-CON-9010 | Construction supervision & site management (LOE) |  |  |  | 47% → 52% |  |  |
| MTP-CON-1310 | Ride systems installation (all rides) |  |  |  | 60% → 79% |  |  |
| LWP-CON-1105 | Long-lead MEP plant procurement & delivery |  |  |  | 48% → 98% |  |  |
| LWP-CON-1110 | MEP first fix - lower levels |  |  |  | 27% → 77% |  |  |
| LWP-CON-9010 | Construction supervision & site management (LOE) |  |  |  | 27% → 34% |  |  |
| LWP-CON-1030 | Roof structure & roofing |  |  |  | 30% → 85% |  |  |
| LWP-CON-1040 | Building envelope & facade |  |  |  | 27% → 77% |  |  |
| CON | **Construction** |  | 2027-03-25 → 2027-03-24 (-1d) |  |  |  |  |
| EXT | **External Works** | 2027-01-11 → 2027-01-10 (-1d) | 2027-03-25 → 2027-03-24 (-1d) |  |  |  |  |
| DAR-CON-1410 | External works & landscaping | 2027-01-11 → 2027-01-10 (-1d) | 2027-02-27 → 2027-02-25 (-2d) |  |  | 38d → 39d |  |
| DAR-CON-1430 | Car parks & drop-off | 2027-01-23 → 2027-01-21 (-2d) | 2027-02-27 → 2027-02-25 (-2d) |  |  | 38d → 39d |  |
| DAR-CON-M142 | Ready for commissioning (construction complete) | 2027-03-25 → 2027-03-24 (-1d) | 2027-03-25 → 2027-03-24 (-1d) |  |  | 18d → 19d |  |
| FIT | **Fit-out & Finishes** |  | 2027-03-25 → 2027-03-24 (-1d) |  |  |  |  |
| DAR-CON-1050 | Internal partitions & ceilings | 2026-06-23 A |  |  | 0% → 6% |  |  |
| DAR-CON-1210 | Back-of-house fit-out | 2026-11-21 → 2026-11-19 (-2d) | 2027-01-05 → 2027-01-04 (-1d) |  |  | 18d → 19d |  |
| DAR-CON-1220 | Front-of-house fit-out & finishes | 2026-11-21 → 2026-11-19 (-2d) | 2027-01-10 → 2027-01-09 (-1d) |  |  | 14d → 15d | DAR-CON-1132 → DAR-CON-1132, DAR-CON-1240 |
| DAR-CON-1225 | FOH final finishes & joinery | 2027-01-11 → 2027-01-10 (-1d) | 2027-02-27 → 2027-02-25 (-2d) |  |  | 18d → 19d |  |
| DAR-CON-1230 | Signage & wayfinding | 2027-02-28 → 2027-02-27 (-1d) | 2027-03-25 → 2027-03-24 (-1d) |  |  | 18d → 19d |  |
| MEP | **MEP Installation** |  | 2026-12-30 → 2026-12-29 (-1d) |  |  |  |  |
| DAR-CON-1105 | Long-lead MEP plant procurement & delivery |  | 2026-06-11 A |  | 80% → 100% | 36d → none |  |
| DAR-CON-1110 | MEP first fix - lower levels |  |  |  | 46% → 88% |  |  |
| DAR-CON-1112 | MEP first fix - upper levels & roof plant | 2026-07-02 → 2026-06-13 A (-19d) | 2026-08-17 → 2026-08-16 (-1d) | 40d → 50d | 0% → 22% |  |  |
| DAR-CON-1120 | Main plant installation (chillers, switchgear, AHUs) | 2026-06-23 A | 2026-08-02 → 2026-08-13 (+11d) | 35d → 45d | 0% → 4% | 27d → 17d |  |
| DAR-CON-1131 | MEP second fix | 2026-08-18 → 2026-08-17 (-1d) | 2026-10-04 → 2026-10-03 (-1d) |  |  | 14d → 15d |  |
| DAR-CON-1132 | MEP second fix | 2026-10-05 → 2026-10-04 (-1d) | 2026-11-19 → 2026-11-18 (-1d) |  |  | 14d → 15d |  |
| DAR-CON-1140 | BMS & ELV installation | 2026-10-05 → 2026-10-04 (-1d) | 2026-11-14 → 2026-11-12 (-2d) |  |  | 63d → 64d |  |
| DAR-CON-1135 | MEP second fix - Zone C (BOH & plant rooms) | 2026-10-22 → 2026-10-21 (-1d) | 2026-12-01 → 2026-11-30 (-1d) |  |  | 48d → 49d |  |
| DAR-CON-1150 | Vertical transportation installation | 2026-11-21 → 2026-11-19 (-2d) | 2026-12-30 → 2026-12-29 (-1d) |  |  | 27d → 28d |  |
| MGT | **Management & Supervision** |  | 2027-03-25 → 2027-03-24 (-1d) |  |  |  |  |
| DAR-CON-9010 | Construction supervision & site management (LOE) |  | 2027-03-25 → 2027-03-24 (-1d) | 360d → 359d | 30% → 36% | 18d → 19d |  |
| STR | **Structure & Envelope** |  | 2026-06-22 → 2026-06-27 (+5d) |  |  |  |  |
| DAR-CON-1030 | Roof structure & roofing |  | 2026-06-22 → 2026-06-27 A (+5d) |  | 55% → 100% | 27d → none |  |
| DAR-CON-1040 | Building envelope & facade |  | 2026-06-22 A |  | 55% → 100% | 27d → none |  |
| SYS | **Specialist Systems** | 2026-08-18 → 2026-08-17 (-1d) | 2027-02-14 → 2027-02-17 (+3d) |  |  |  |  |
| DAR-CON-1310 | Seating bowl & retractable seating | 2026-08-18 → 2026-08-17 (-1d) | 2026-10-08 → 2026-10-07 (-1d) |  |  | 17d → 14d |  |
| DAR-CON-1320 | Show systems (AV, rigging, LED) installation | 2026-10-10 → 2026-10-08 (-2d) | 2026-11-24 → 2026-11-28 (+4d) | 40d → 44d |  | 17d → 14d |  |
| DAR-CON-1330 | Premium suites & hospitality fit-out | 2026-11-25 → 2026-11-29 (+4d) | 2027-01-10 → 2027-01-13 (+3d) |  |  | 17d → 14d |  |
| DAR-CON-1340 | Venue technology integration (ticketing, broadcast, IPTV) | 2027-01-11 → 2027-01-14 (+3d) | 2027-02-14 → 2027-02-17 (+3d) |  |  | 17d → 14d |  |
| TNC | **Testing & Commissioning** | 2027-01-11 → 2027-01-10 (-1d) | 2027-04-15 → 2027-04-14 (-1d) |  |  |  |  |
| COM | **Systems Commissioning** | 2027-01-31 → 2027-01-30 (-1d) | 2027-03-31 → 2027-03-30 (-1d) |  |  |  |  |
| DAR-TNC-2110 | HVAC & chilled water commissioning | 2027-01-31 → 2027-01-30 (-1d) | 2027-02-24 → 2027-02-23 (-1d) |  |  | 16d → 17d |  |
| DAR-TNC-2120 | Electrical systems commissioning | 2027-01-31 → 2027-01-30 (-1d) | 2027-02-19 → 2027-02-18 (-1d) |  |  | 16d → 17d |  |
| DAR-TNC-2130 | Fire & life safety systems commissioning | 2027-02-20 → 2027-02-19 (-1d) | 2027-03-16 → 2027-03-15 (-1d) |  |  | 31d → 32d |  |
| DAR-TNC-2140 | Show systems commissioning (AV, rigging, LED) | 2027-02-20 → 2027-02-19 (-1d) | 2027-03-16 → 2027-03-15 (-1d) |  |  | 16d → 17d |  |
| DAR-TNC-2160 | Vertical transportation testing & certification | 2027-02-20 → 2027-02-19 (-1d) | 2027-03-01 → 2027-02-28 (-1d) |  |  | 46d → 47d |  |
| DAR-TNC-2150 | BMS & ELV commissioning | 2027-02-25 → 2027-02-24 (-1d) | 2027-03-16 → 2027-03-15 (-1d) |  |  | 16d → 17d |  |
| DAR-TNC-2145 | Acoustic & broadcast performance testing | 2027-03-17 → 2027-03-16 (-1d) | 2027-03-31 → 2027-03-30 (-1d) |  |  | 16d → 17d |  |
| DAR-TNC-2170 | Security systems (CCTV, access control) commissioning | 2027-03-17 → 2027-03-16 (-1d) | 2027-03-31 → 2027-03-30 (-1d) |  |  | 16d → 17d |  |
| IST | **Integrated Systems Testing** | 2027-04-01 → 2027-03-31 (-1d) | 2027-04-15 → 2027-04-14 (-1d) |  |  |  |  |
| DAR-TNC-2210 | Integrated systems test (IST) | 2027-04-01 → 2027-03-31 (-1d) | 2027-04-15 → 2027-04-14 (-1d) |  |  | 16d → 17d |  |
| DAR-TNC-M220 | T&C complete (ICA certificate) | 2027-04-15 → 2027-04-14 (-1d) | 2027-04-15 → 2027-04-14 (-1d) |  |  | 16d → 17d |  |
| PRE | **Pre-commissioning** | 2027-01-11 → 2027-01-10 (-1d) | 2027-01-30 → 2027-01-29 (-1d) |  |  |  |  |
| DAR-TNC-2010 | Pre-commissioning checks (electrical & mechanical) | 2027-01-11 → 2027-01-10 (-1d) | 2027-01-30 → 2027-01-29 (-1d) |  |  | 16d → 17d |  |
| HOV | **Handover** | 2027-03-27 → 2027-03-25 (-2d) | 2027-06-10 → 2027-06-09 (-1d) |  |  |  |  |
| APR | **Authority Inspections & Approvals** | 2027-04-18 → 2027-04-15 (-3d) | 2027-06-10 → 2027-06-09 (-1d) |  |  |  |  |
| DAR-HOV-3110 | Civil defence & fire authority inspection | 2027-04-18 → 2027-04-15 (-3d) | 2027-05-06 → 2027-05-05 (-1d) |  |  | 10d → 11d |  |
| DAR-HOV-3120 | Completion certificate application & review | 2027-05-09 → 2027-05-06 (-3d) | 2027-06-10 → 2027-06-09 (-1d) |  |  | 10d → 11d |  |
| DAR-HOV-M130 | Occupancy certificate issued | 2027-06-10 → 2027-06-09 (-1d) | 2027-06-10 → 2027-06-09 (-1d) |  |  | 10d → 11d |  |
| HND | **Completion & Handover** | 2027-04-18 → 2027-04-15 (-3d) | 2027-06-10 → 2027-06-09 (-1d) |  |  |  |  |
| DAR-HOV-3210 | Handover documentation (O&M, as-builts, warranties) | 2027-04-18 → 2027-04-15 (-3d) | 2027-05-27 → 2027-05-26 (-1d) |  |  | 60d → 61d |  |
| DAR-HOV-3220 | Defects walkdown with operator | 2027-05-01 → 2027-04-29 (-2d) | 2027-05-05 → 2027-05-04 (-1d) |  |  | 86d → 87d |  |
| DAR-HOV-M230 | Handover to operator | 2027-06-10 → 2027-06-09 (-1d) | 2027-06-10 → 2027-06-09 (-1d) |  |  | 60d → 61d |  |
| SNG | **Snagging & Defects** | 2027-03-27 → 2027-03-25 (-2d) | 2027-04-29 → 2027-04-28 (-1d) |  |  |  |  |
| DAR-HOV-3010 | Snagging & defects rectification | 2027-03-27 → 2027-03-25 (-2d) | 2027-04-29 → 2027-04-28 (-1d) |  |  | 20d → 21d |  |
| DAR-OPM-M120 | Operator site access granted | 2027-04-17 → 2027-04-15 (-2d) | 2027-04-17 → 2027-04-15 (-2d) |  |  | 55d → 56d |  |
| DAR-OPM-4130 | On-site familiarisation & equipment training | 2027-06-11 → 2027-06-10 (-1d) | 2027-07-10 → 2027-07-09 (-1d) |  |  | 14d → 15d |  |
| PBR-CON-1050 | Internal partitions & ceilings | 2026-06-11 A |  |  | 0% → 34% |  |  |
| PBR-CON-1110 | MEP first fix - lower levels |  | 2026-06-06 A |  | 85% → 100% | 1d → none |  |
| PBR-CON-1105 | Long-lead MEP plant procurement & delivery |  |  |  | 48% → 98% |  |  |

| ID | Task | Start | Finish | Complete | Total float |
| --- | --- | --- | --- | --- | --- |
| PBR-CON-1112 | MEP first fix - upper levels & roof plant | 2026-06-07 A |  | 0% → 40% |  |
| PBR-CON-9010 | Construction supervision & site management (LOE) |  |  | 34% → 40% |  |
| PBR-CON-1030 | Roof structure & roofing |  | 2026-06-06 A | 85% → 100% | 17d → none |
| PBR-CON-1040 | Building envelope & facade |  | 2026-06-10 A | 77% → 100% | 13d → none |
| PRG-OPM-4010 | Destination-wide recruitment campaign |  |  | 40% → 59% | 120d → 101d |
| PRG-D1R-9010 | Programme management & controls (LOE) |  |  | 48% → 51% |  |

## Version 4 (data date 2026-07-30, saved 2026-07-30, file DOP_BL1.xer)

Note of the change: feat(data): synthetic integrated master schedule, storyline, progress simulation and P6 XER export

Last finish 2027-09-30 → 2027-10-06 (+6d). Complete tasks 22 → 32.

Changed:

| ID | Task | Start | Finish | Duration | Complete | Total float | Predecessors | Other |
| --- | --- | --- | --- | --- | --- | --- | --- | --- |
| MTP-CON-1120 | Main plant installation (chillers, switchgear, AHUs) |  | 2026-07-08 A |  | 66% → 100% | 0d → none |  |  |
| MTP-CON-1131 | MEP second fix - Zone A | 2026-07-09 A |  |  | 0% → 45% | 0d → 22d |  |  |
| MTP-CON-9010 | Construction supervision & site management (LOE) |  |  |  | 52% → 60% |  |  |  |
| MTP-CON-1310 | Ride systems installation (all rides) |  | 2026-07-22 A |  | 79% → 100% | 28d → none |  |  |
| MTP-CON-1320 | Ride control systems & ride enclosures | 2026-07-23 A |  |  | 0% → 15% | 28d → 50d |  |  |
| MTP-TNC-2140 | Ride testing & commissioning (static & dynamic) |  |  |  |  | 0d → 26d |  | constraint mandatory start 2027-01-11 → none |
| LWP-CON-1050 | Internal partitions & ceilings | 2026-07-07 A |  |  | 0% → 57% |  |  |  |
| LWP-CON-1105 | Long-lead MEP plant procurement & delivery |  | 2026-06-25 A |  | 98% → 100% | 38d → none |  |  |
| LWP-CON-1110 | MEP first fix - lower levels |  | 2026-07-06 A |  | 77% → 100% | 24d → none |  |  |
| LWP-CON-1120 | Main plant installation (chillers, switchgear, AHUs) | 2026-07-02 A |  |  | 0% → 69% |  |  |  |
| LWP-CON-1112 | MEP first fix - upper levels & roof plant | 2026-07-07 A |  |  | 0% → 50% |  |  |  |
| LWP-CON-9010 | Construction supervision & site management (LOE) |  |  |  | 34% → 42% |  |  |  |
| LWP-CON-1030 | Roof structure & roofing |  | 2026-07-01 A |  | 85% → 100% | 33d → none |  |  |
| LWP-CON-1040 | Building envelope & facade |  | 2026-07-06 A |  | 77% → 100% | 29d → none |  |  |
| DAR | **Dune Arena** |  | 2027-09-22 → 2027-09-29 (+7d) |  |  |  |  |  |
| CON | **Construction** |  | 2027-03-24 → 2027-03-30 (+6d) |  |  |  |  |  |
| EXT | **External Works** | 2027-01-10 → 2026-12-29 (-12d) | 2027-03-24 → 2027-03-30 (+6d) |  |  |  |  |  |
| DAR-CON-1410 | External works & landscaping | 2027-01-10 → 2026-12-29 (-12d) | 2027-02-25 → 2027-02-13 (-12d) |  |  | 39d → 49d |  |  |
| DAR-CON-1430 | Car parks & drop-off | 2027-01-21 → 2027-01-10 (-11d) | 2027-02-25 → 2027-02-13 (-12d) |  |  | 39d → 49d |  |  |
| DAR-CON-M142 | Ready for commissioning (construction complete) | 2027-03-24 → 2027-03-30 (+6d) | 2027-03-24 → 2027-03-30 (+6d) |  |  | 19d → 14d |  |  |
| FIT | **Fit-out & Finishes** |  | 2027-03-24 → 2027-03-30 (+6d) |  |  |  |  |  |
| DAR-CON-1050 | Internal partitions & ceilings |  |  |  | 6% → 91% | 27d → 26d |  |  |
| DAR-CON-1220 | Front-of-house fit-out & finishes | 2026-11-19 → 2026-11-08 (-11d) | 2027-01-09 → 2026-12-28 (-12d) |  |  |  | DAR-CON-1132, DAR-CON-1240 → DAR-CON-1132 FF+10d, DAR-CON-1132 SS+30d, DAR-CON-1240 |  |
| DAR-CON-1225 | FOH final finishes & joinery | 2027-01-10 → 2026-12-30 (-11d) | 2027-02-25 → 2027-02-18 (-7d) | 40d → 44d |  | 19d → 14d |  |  |
| DAR-CON-1230 | Signage & wayfinding | 2027-02-27 → 2027-02-20 (-7d) | 2027-03-24 → 2027-03-30 (+6d) | 20d → 30d |  | 19d → 14d |  |  |
| DAR-CON-1110 | MEP first fix - lower levels |  | 2026-07-01 A |  | 88% → 100% | 14d → none |  |  |
| DAR-CON-1112 | MEP first fix - upper levels & roof plant |  |  |  | 22% → 70% | 14d → 10d |  |  |
| DAR-CON-1120 | Main plant installation (chillers, switchgear, AHUs) |  |  |  | 4% → 71% | 17d → 16d |  |  |
| DAR-CON-1131 | MEP second fix - Zone A |  |  |  |  | 15d → 14d |  | was named MEP second fix |
| DAR-CON-1132 | MEP second fix - Zone B |  |  |  |  | 15d → 14d |  | was named MEP second fix |
| MGT | **Management & Supervision** |  | 2027-03-24 → 2027-03-30 (+6d) |  |  |  |  |  |
| DAR-CON-9010 | Construction supervision & site management (LOE) |  | 2027-03-24 → 2027-03-30 (+6d) | 359d → 364d | 36% → 44% | 19d → 14d |  |  |
| STR | **Structure & Envelope** |  | 2026-06-27 → 2026-06-22 (-5d) |  |  |  |  |  |
| DAR-CON-1030 | Roof structure & roofing |  | 2026-06-27 A → 2026-06-22 A (-5d) |  |  |  |  |  |
| SYS | **Specialist Systems** |  | 2027-02-17 → 2027-02-23 (+6d) |  |  |  |  |  |
| DAR-CON-1330 | Premium suites & hospitality fit-out |  | 2027-01-13 → 2027-01-18 (+5d) | 40d → 44d |  | 14d → 10d |  |  |
| DAR-CON-1340 | Venue technology integration (ticketing, broadcast, IPTV) | 2027-01-14 → 2027-01-19 (+5d) | 2027-02-17 → 2027-02-23 (+6d) |  |  | 14d → 10d |  |  |
| TNC | **Testing & Commissioning** | 2027-01-10 → 2027-01-05 (-5d) | 2027-04-14 → 2027-04-19 (+5d) |  |  |  |  |  |
| COM | **Systems Commissioning** | 2027-01-30 → 2027-01-25 (-5d) | 2027-03-30 → 2027-04-04 (+5d) |  |  |  |  |  |
| DAR-TNC-2110 | HVAC & chilled water commissioning | 2027-01-30 → 2027-01-25 (-5d) | 2027-02-23 → 2027-02-18 (-5d) |  |  | 17d → 22d |  |  |
| DAR-TNC-2120 | Electrical systems commissioning | 2027-01-30 → 2027-01-25 (-5d) | 2027-02-18 → 2027-02-13 (-5d) |  |  | 17d → 22d |  |  |
| DAR-TNC-2130 | Fire & life safety systems commissioning | 2027-02-19 → 2027-02-14 (-5d) | 2027-03-15 → 2027-03-10 (-5d) |  |  | 32d → 37d |  |  |
| DAR-TNC-2160 | Vertical transportation testing & certification | 2027-02-19 → 2027-02-14 (-5d) | 2027-02-28 → 2027-02-23 (-5d) |  |  | 47d → 52d |  |  |
| DAR-TNC-2150 | BMS & ELV commissioning | 2027-02-24 → 2027-02-19 (-5d) | 2027-03-15 → 2027-03-10 (-5d) |  |  | 17d → 22d |  |  |
| DAR-TNC-2140 | Show systems commissioning (AV, rigging, LED) | 2027-02-19 → 2027-02-24 (+5d) | 2027-03-15 → 2027-03-20 (+5d) |  |  | 17d → 12d |  |  |
| DAR-TNC-2170 | Security systems (CCTV, access control) commissioning | 2027-03-16 → 2027-03-11 (-5d) | 2027-03-30 → 2027-03-25 (-5d) |  |  | 17d → 22d |  |  |
| DAR-TNC-2145 | Acoustic & broadcast performance testing | 2027-03-16 → 2027-03-21 (+5d) | 2027-03-30 → 2027-04-04 (+5d) |  |  | 17d → 12d |  |  |
| IST | **Integrated Systems Testing** | 2027-03-31 → 2027-04-05 (+5d) | 2027-04-14 → 2027-04-19 (+5d) |  |  |  |  |  |
| DAR-TNC-2210 | Integrated systems test (IST) | 2027-03-31 → 2027-04-05 (+5d) | 2027-04-14 → 2027-04-19 (+5d) |  |  | 17d → 12d |  |  |
| DAR-TNC-M220 | T&C complete (ICA certificate) | 2027-04-14 → 2027-04-19 (+5d) | 2027-04-14 → 2027-04-19 (+5d) |  |  | 17d → 12d |  |  |
| PRE | **Pre-commissioning** | 2027-01-10 → 2027-01-05 (-5d) | 2027-01-29 → 2027-01-24 (-5d) |  |  |  |  |  |
| DAR-TNC-2010 | Pre-commissioning checks (electrical & mechanical) | 2027-01-10 → 2027-01-05 (-5d) | 2027-01-29 → 2027-01-24 (-5d) |  |  | 17d → 22d |  |  |
| HOV | **Handover** | 2027-03-25 → 2027-03-31 (+6d) | 2027-06-09 → 2027-06-14 (+5d) |  |  |  |  |  |
| APR | **Authority Inspections & Approvals** | 2027-04-15 → 2027-04-20 (+5d) | 2027-06-09 → 2027-06-14 (+5d) |  |  |  |  |  |
| DAR-HOV-3110 | Civil defence & fire authority inspection | 2027-04-15 → 2027-04-20 (+5d) | 2027-05-05 → 2027-05-10 (+5d) |  |  | 11d → 8d |  |  |
| DAR-HOV-3120 | Completion certificate application & review | 2027-05-06 → 2027-05-11 (+5d) | 2027-06-09 → 2027-06-14 (+5d) |  |  | 11d → 8d |  |  |
| DAR-HOV-M130 | Occupancy certificate issued | 2027-06-09 → 2027-06-14 (+5d) | 2027-06-09 → 2027-06-14 (+5d) |  |  | 11d → 8d |  |  |
| HND | **Completion & Handover** | 2027-04-15 → 2027-04-20 (+5d) | 2027-06-09 → 2027-06-14 (+5d) |  |  |  |  |  |
| DAR-HOV-3210 | Handover documentation (O&M, as-builts, warranties) | 2027-04-15 → 2027-04-20 (+5d) | 2027-05-26 → 2027-05-31 (+5d) |  |  | 61d → 58d |  |  |
| DAR-HOV-3220 | Defects walkdown with operator | 2027-04-29 → 2027-05-05 (+6d) | 2027-05-04 → 2027-05-10 (+6d) |  |  | 87d → 82d |  |  |
| DAR-HOV-M230 | Handover to operator | 2027-06-09 → 2027-06-14 (+5d) | 2027-06-09 → 2027-06-14 (+5d) |  |  | 61d → 57d |  |  |
| SNG | **Snagging & Defects** | 2027-03-25 → 2027-03-31 (+6d) | 2027-04-28 → 2027-05-04 (+6d) |  |  |  |  |  |
| DAR-HOV-3010 | Snagging & defects rectification | 2027-03-25 → 2027-03-31 (+6d) | 2027-04-28 → 2027-05-04 (+6d) |  |  | 21d → 16d |  |  |
| OPM | **Operator Mobilisation & Training** |  | 2027-08-05 → 2027-08-11 (+6d) |  |  |  |  |  |
| TRN | **Training & Familiarisation** |  | 2027-08-05 → 2027-08-11 (+6d) |  |  |  |  |  |
| DAR-OPM-M120 | Operator site access granted | 2027-04-15 → 2027-04-20 (+5d) | 2027-04-15 → 2027-04-20 (+5d) |  |  | 56d → 52d |  |  |
| DAR-OPM-4130 | On-site familiarisation & equipment training | 2027-06-10 → 2027-06-15 (+5d) | 2027-07-09 → 2027-07-14 (+5d) |  |  | 15d → 10d |  |  |
| DAR-OPM-4140 | SOPs & emergency procedures validated | 2027-07-11 → 2027-07-15 (+4d) | 2027-08-05 → 2027-08-11 (+6d) |  |  | 10d → 6d |  |  |
| DAR-OPM-M150 | Operator trained & certified | 2027-08-05 → 2027-08-11 (+6d) | 2027-08-05 → 2027-08-11 (+6d) |  |  | 10d → 6d |  |  |
| OTE | **Operational Trials & Test Events** | 2027-08-06 → 2027-08-12 (+6d) | 2027-09-13 → 2027-09-19 (+6d) |  |  |  |  |  |

| ID | Task | Start | Finish | Duration | Complete | Total float | Predecessors |
| --- | --- | --- | --- | --- | --- | --- | --- |
| TEV | **Test Events** | 2027-08-31 → 2027-09-06 (+6d) | 2027-09-13 → 2027-09-19 (+6d) |  |  |  |  |
| DAR-OTE-5110 | Test events (invited guests) | 2027-08-31 → 2027-09-06 (+6d) | 2027-09-13 → 2027-09-19 (+6d) |  |  | 14d → 8d |  |
| TRL | **Operational Trials** | 2027-08-06 → 2027-08-12 (+6d) | 2027-08-30 → 2027-09-05 (+6d) |  |  |  |  |
| DAR-OTE-5010 | Operational trials (technical rehearsals) | 2027-08-06 → 2027-08-12 (+6d) | 2027-08-25 → 2027-08-31 (+6d) |  |  | 14d → 8d |  |
| DAR-OTE-5030 | Ticketing & POS systems trial | 2027-08-09 → 2027-08-15 (+6d) | 2027-08-15 → 2027-08-21 (+6d) |  |  | 29d → 23d |  |
| DAR-OTE-5020 | Emergency drills with civil defence | 2027-08-26 → 2027-09-01 (+6d) | 2027-08-30 → 2027-09-05 (+6d) |  |  | 14d → 8d |  |
| D1R | **Day 1 Readiness** | 2027-09-14 → 2027-09-20 (+6d) | 2027-09-22 → 2027-09-29 (+7d) |  |  |  |  |
| GAT | **Readiness Gates** | 2027-09-14 → 2027-09-20 (+6d) | 2027-09-22 → 2027-09-29 (+7d) |  |  |  |  |
| DAR-D1R-6010 | Operational readiness assessment | 2027-09-14 → 2027-09-20 (+6d) | 2027-09-22 → 2027-09-29 (+7d) |  |  | 10d → 6d |  |
| DAR-D1R-M020 | Asset Day 1 ready | 2027-09-22 → 2027-09-29 (+7d) | 2027-09-22 → 2027-09-29 (+7d) |  |  | 16d → 10d |  |
| EXT | **External Works** |  | 2027-02-14 → 2027-03-14 (+28d) |  |  |  |  |
| PBR-CON-M142 | Ready for commissioning (construction complete) | 2027-02-14 → 2027-03-14 (+28d) | 2027-02-14 → 2027-03-14 (+28d) |  |  | 24d → 4d | PBR-CON-1135, PBR-CON-1140, PBR-CON-1150, PBR-CON-1210, PBR-CON-1340, PBR-CON-1430 → PBR-CON-1135, PBR-CON-1140, PBR-CON-1150, PBR-CON-1210, PBR-CON-1230, PBR-CON-1340, PBR-CON-1430 |
| PBR-CON-1050 | Internal partitions & ceilings |  | 2026-07-21 A |  | 34% → 100% | 13d → none |  |
| PBR-CON-1105 | Long-lead MEP plant procurement & delivery |  | 2026-06-25 A |  | 98% → 100% | 0d → none |  |
| PBR-CON-1112 | MEP first fix - upper levels & roof plant |  | 2026-07-22 A |  | 40% → 100% | 1d → none |  |
| PBR-CON-1120 | Main plant installation (chillers, switchgear, AHUs) | 2026-06-27 A |  |  | 0% → 83% |  |  |
| MGT | **Management & Supervision** |  | 2027-02-14 → 2027-03-14 (+28d) |  |  |  |  |
| PBR-CON-9010 | Construction supervision & site management (LOE) |  | 2027-02-14 → 2027-03-14 (+28d) | 336d → 356d | 40% → 47% | 24d → 4d |  |
| PBR-CON-1310 | Shell & core handover to tenants | 2026-07-23 A |  |  | 0% → 20% |  |  |
| HOV | **Handover** | 2027-02-15 → 2027-03-15 (+28d) |  |  |  |  |  |
| HND | **Completion & Handover** | 2027-03-27 → 2027-04-04 (+8d) |  |  |  |  |  |
| PBR-HOV-3220 | Defects walkdown with operator | 2027-03-27 → 2027-04-19 (+23d) | 2027-03-31 → 2027-04-24 (+24d) |  |  | 116d → 96d |  |
| SNG | **Snagging & Defects** | 2027-02-15 → 2027-03-15 (+28d) | 2027-03-25 → 2027-04-18 (+24d) |  |  |  |  |
| PBR-HOV-3010 | Snagging & defects rectification | 2027-02-15 → 2027-03-15 (+28d) | 2027-03-25 → 2027-04-18 (+24d) |  |  | 50d → 30d |  |
| PEW-CON-1110 | Primary access road & junctions | 2026-07-04 A |  |  | 0% → 52% |  |  |
| PRG | **Programme Integration & Day 1** |  | 2027-09-30 → 2027-10-06 (+6d) |  |  |  |  |
| PRG-OPM-4010 | Destination-wide recruitment campaign |  |  |  | 59% → 84% | 101d → 76d |  |
| OTE | **Operational Trials & Test Events** |  | 2027-09-21 → 2027-09-28 (+7d) |  |  |  |  |
| TEV | **Test Events** | 2027-09-14 → 2027-09-20 (+6d) | 2027-09-21 → 2027-09-28 (+7d) |  |  |  |  |
| PRG-OTE-5020 | Integrated destination test event (all assets) | 2027-09-14 → 2027-09-20 (+6d) | 2027-09-18 → 2027-09-25 (+7d) |  |  | 17d → 11d |  |
| PRG-OTE-5030 | Opening ceremony operational rehearsal | 2027-09-19 → 2027-09-26 (+7d) | 2027-09-21 → 2027-09-28 (+7d) |  |  | 17d → 11d |  |
| D1R | **Day 1 Readiness** |  | 2027-09-30 → 2027-10-06 (+6d) |  |  |  |  |
| GAT | **Readiness Gates** |  | 2027-09-30 → 2027-10-06 (+6d) |  |  |  |  |
| PRG-D1R-6010 | Day 1 go/no-go readiness review | 2027-09-26 → 2027-09-30 (+4d) | 2027-09-30 → 2027-10-06 (+6d) |  |  | 10d → 6d |  |
| PRG-D1R-M040 | RG4 Day 1 go/no-go gate | 2027-09-30 → 2027-10-06 (+6d) | 2027-09-30 → 2027-10-06 (+6d) |  |  | 14d → 8d |  |
| PRG-D1R-M999 | Day 1 Opening | 2027-09-30 → 2027-10-06 (+6d) | 2027-09-30 → 2027-10-06 (+6d) |  |  | 14d → 8d |  |
| MGT | **Management & Supervision** |  | 2027-09-30 → 2027-10-06 (+6d) |  |  |  |  |
| PRG-D1R-9010 | Programme management & controls (LOE) |  | 2027-09-30 → 2027-10-06 (+6d) | 651d → 655d | 51% → 54% | 10d → 6d |  |

## Version 5 (data date 2026-08-27, saved 2026-08-27, file DOP_UPD_2026-08-27.xer)

Note of the change: feat(data): synthetic integrated master schedule, storyline, progress simulation and P6 XER export

Last finish 2027-10-06 → 2027-10-11 (+5d). Complete tasks 32 → 42.

Changed:

| ID | Task | Start | Finish | Duration | Complete | Total float | Predecessors | Other |
| --- | --- | --- | --- | --- | --- | --- | --- | --- |
| MTP-CON-1131 | MEP second fix - Zone A |  | 2026-08-24 A |  | 45% → 100% | 22d → none |  |  |
| MTP-CON-1132 | MEP second fix - Zone B | 2026-08-25 A |  |  | 0% → 5% |  |  |  |
| MTP-CON-1140 | BMS & ELV installation | 2026-08-25 A |  |  | 0% → 6% |  |  |  |
| MTP-CON-9010 | Construction supervision & site management (LOE) |  |  |  | 60% → 65% |  |  |  |
| MTP-CON-1320 | Ride control systems & ride enclosures |  |  |  | 15% → 75% |  |  |  |
| LWP-CON-1050 | Internal partitions & ceilings |  | 2026-08-16 A |  | 57% → 100% | 29d → none |  |  |
| LWP-CON-1120 | Main plant installation (chillers, switchgear, AHUs) |  | 2026-08-11 A |  | 69% → 100% | 33d → none |  |  |
| LWP-CON-1112 | MEP first fix - upper levels & roof plant |  | 2026-08-22 A |  | 50% → 100% | 24d → none |  |  |
| LWP-CON-1131 | MEP second fix - Zone A | 2026-08-23 A |  |  | 0% → 10% |  |  |  |
| LWP-CON-9010 | Construction supervision & site management (LOE) |  |  |  | 42% → 49% |  |  |  |
| LWP-CON-1310 | Slide towers & flumes installation | 2026-08-23 A |  |  | 0% → 9% |  |  |  |
| LWP-OPM-4020 | Onboarding & induction |  |  |  |  | 41d → 0d |  | constraint none → mandatory start 2027-02-21 |
| DAR | **Dune Arena** |  | 2027-09-29 → 2027-10-04 (+5d) |  |  |  |  |  |
| CON | **Construction** |  | 2027-03-30 → 2027-04-04 (+5d) |  |  |  |  |  |
| EXT | **External Works** | 2026-12-29 → 2027-01-03 (+5d) | 2027-03-30 → 2027-04-04 (+5d) |  |  |  |  |  |
| DAR-CON-1410 | External works & landscaping | 2026-12-29 → 2027-01-03 (+5d) | 2027-02-13 → 2027-02-17 (+4d) |  |  | 49d → 45d |  |  |
| DAR-CON-1430 | Car parks & drop-off | 2027-01-10 → 2027-01-14 (+4d) | 2027-02-13 → 2027-02-17 (+4d) |  |  | 49d → 45d |  |  |
| DAR-CON-M142 | Ready for commissioning (construction complete) | 2027-03-30 → 2027-04-04 (+5d) | 2027-03-30 → 2027-04-04 (+5d) |  |  | 14d → 10d |  |  |
| FIT | **Fit-out & Finishes** |  | 2027-03-30 → 2027-04-04 (+5d) |  |  |  |  |  |
| DAR-CON-1050 | Internal partitions & ceilings |  | 2026-08-02 A |  | 91% → 100% | 26d → none |  |  |
| DAR-CON-1240 | Additional acoustic treatment - seating bowl | 2026-10-04 → 2026-10-08 (+4d) | 2026-10-20 → 2026-10-25 (+5d) |  |  | 30d → 26d |  |  |
| DAR-CON-1220 | Front-of-house fit-out & finishes | 2026-11-08 → 2026-11-12 (+4d) | 2026-12-28 → 2027-01-02 (+5d) |  |  | 15d → 11d |  |  |
| DAR-CON-1210 | Back-of-house fit-out | 2026-11-19 → 2026-11-24 (+5d) | 2027-01-04 → 2027-01-09 (+5d) |  |  | 19d → 23d |  |  |
| DAR-CON-1225 | FOH final finishes & joinery | 2026-12-30 → 2027-01-04 (+5d) | 2027-02-18 → 2027-02-24 (+6d) |  |  | 14d → 10d |  |  |
| DAR-CON-1230 | Signage & wayfinding | 2027-02-20 → 2027-02-25 (+5d) | 2027-03-30 → 2027-04-04 (+5d) |  |  | 14d → 10d |  |  |
| MEP | **MEP Installation** |  | 2026-12-29 → 2027-01-03 (+5d) |  |  |  |  |  |
| DAR-CON-1112 | MEP first fix - upper levels & roof plant |  | 2026-08-16 A |  | 70% → 100% | 10d → none |  |  |
| DAR-CON-1120 | Main plant installation (chillers, switchgear, AHUs) |  | 2026-08-13 A |  | 71% → 100% | 16d → none |  |  |
| DAR-CON-1131 | MEP second fix - Zone A | 2026-08-17 A | 2026-10-03 → 2026-10-07 (+4d) | 40d → 44d | 0% → 20% | 14d → 10d |  |  |
| DAR-CON-1132 | MEP second fix - Zone B | 2026-10-04 → 2026-10-08 (+4d) | 2026-11-18 → 2026-11-23 (+5d) |  |  | 14d → 10d |  |  |
| DAR-CON-1140 | BMS & ELV installation | 2026-10-04 → 2026-10-08 (+4d) | 2026-11-12 → 2026-11-17 (+5d) |  |  | 64d → 68d |  |  |
| DAR-CON-1135 | MEP second fix - Zone C (BOH & plant rooms) | 2026-10-21 → 2026-10-26 (+5d) | 2026-11-30 → 2026-12-05 (+5d) |  |  | 49d → 53d |  |  |
| DAR-CON-1150 | Vertical transportation installation | 2026-11-19 → 2026-11-24 (+5d) | 2026-12-29 → 2027-01-03 (+5d) |  |  | 14d → 10d |  |  |
| MGT | **Management & Supervision** |  | 2027-03-30 → 2027-04-04 (+5d) |  |  |  |  |  |
| DAR-CON-9010 | Construction supervision & site management (LOE) |  | 2027-03-30 → 2027-04-04 (+5d) | 364d → 368d | 44% → 50% | 14d → 10d |  |  |
| DAR-CON-1310 | Seating bowl & retractable seating | 2026-08-17 A |  |  | 0% → 20% |  |  |  |
| TNC | **Testing & Commissioning** | 2027-01-05 → 2027-01-12 (+7d) |  |  |  |  |  |  |
| COM | **Systems Commissioning** | 2027-01-25 → 2027-01-17 (-8d) |  |  |  |  |  |  |
| DAR-TNC-2120 | Electrical systems commissioning | 2027-01-25 → 2027-01-17 (-8d) | 2027-02-13 → 2027-02-05 (-8d) |  |  | 22d → 30d | DAR-TNC-2010 → DAR-TNC-2010 SS+5d |  |
| DAR-TNC-2110 | HVAC & chilled water commissioning | 2027-01-25 → 2027-02-01 (+7d) | 2027-02-18 → 2027-02-20 (+2d) | 25d → 20d |  | 22d → 24d |  |  |
| DAR-TNC-2130 | Fire & life safety systems commissioning | 2027-02-14 → 2027-02-06 (-8d) | 2027-03-10 → 2027-02-26 (-12d) | 25d → 21d |  | 37d → 49d |  |  |
| DAR-TNC-2160 | Vertical transportation testing & certification | 2027-02-14 → 2027-02-06 (-8d) | 2027-02-23 → 2027-02-15 (-8d) |  |  | 52d → 60d |  |  |
| DAR-TNC-2150 | BMS & ELV commissioning | 2027-02-19 → 2027-02-21 (+2d) | 2027-03-10 → 2027-03-08 (-2d) | 20d → 16d |  | 22d → 24d |  |  |
| DAR-TNC-2170 | Security systems (CCTV, access control) commissioning | 2027-03-11 → 2027-03-09 (-2d) | 2027-03-25 → 2027-03-23 (-2d) |  |  | 22d → 24d |  |  |
| DAR-TNC-2210 | Integrated systems test (IST) |  |  |  |  |  | DAR-CON-M142, DAR-TNC-2130, DAR-TNC-2145, DAR-TNC-2150, DAR-TNC-2160, DAR-TNC-2170 → DAR-CON-9010, DAR-CON-M142, DAR-TNC-2130, DAR-TNC-2145, DAR-TNC-2150, DAR-TNC-2160, DAR-TNC-2170 |  |
| PRE | **Pre-commissioning** | 2027-01-05 → 2027-01-12 (+7d) | 2027-01-24 → 2027-01-31 (+7d) |  |  |  |  |  |
| DAR-TNC-2010 | Pre-commissioning checks (electrical & mechanical) | 2027-01-05 → 2027-01-12 (+7d) | 2027-01-24 → 2027-01-31 (+7d) |  |  | 22d → 24d |  |  |
| HOV | **Handover** | 2027-03-31 → 2027-04-05 (+5d) |  |  |  |  |  |  |
| DAR-HOV-3220 | Defects walkdown with operator | 2027-05-05 → 2027-05-10 (+5d) | 2027-05-10 → 2027-05-15 (+5d) |  |  | 82d → 78d |  |  |
| SNG | **Snagging & Defects** | 2027-03-31 → 2027-04-05 (+5d) | 2027-05-04 → 2027-05-09 (+5d) |  |  |  |  |  |
| DAR-HOV-3010 | Snagging & defects rectification | 2027-03-31 → 2027-04-05 (+5d) | 2027-05-04 → 2027-05-09 (+5d) |  |  | 16d → 12d |  |  |
| OPM | **Operator Mobilisation & Training** |  | 2027-08-11 → 2027-08-15 (+4d) |  |  |  |  |  |
| TRN | **Training & Familiarisation** |  | 2027-08-11 → 2027-08-15 (+4d) |  |  |  |  |  |
| DAR-OPM-4130 | On-site familiarisation & equipment training | 2027-06-15 → 2027-06-19 (+4d) | 2027-07-14 → 2027-07-18 (+4d) |  |  | 10d → 6d |  |  |
| DAR-OPM-M120 | Operator site access granted | 2027-04-20 → 2027-06-19 (+60d) | 2027-04-20 → 2027-06-19 (+60d) |  |  | 52d → 6d |  | constraint start on or after 2027-04-04 → start on or after 2027-06-19 |
| DAR-OPM-4140 | SOPs & emergency procedures validated | 2027-07-15 → 2027-07-19 (+4d) | 2027-08-11 → 2027-08-15 (+4d) |  |  | 6d → 4d |  |  |
| DAR-OPM-M150 | Operator trained & certified | 2027-08-11 → 2027-08-15 (+4d) | 2027-08-11 → 2027-08-15 (+4d) |  |  | 6d → 4d |  |  |
| OTE | **Operational Trials & Test Events** | 2027-08-12 → 2027-08-16 (+4d) | 2027-09-19 → 2027-09-24 (+5d) |  |  |  |  |  |
| TEV | **Test Events** | 2027-09-06 → 2027-09-10 (+4d) | 2027-09-19 → 2027-09-24 (+5d) |  |  |  |  |  |
| DAR-OTE-5110 | Test events (invited guests) | 2027-09-06 → 2027-09-10 (+4d) | 2027-09-19 → 2027-09-24 (+5d) |  |  | 8d → 4d |  |  |
| TRL | **Operational Trials** | 2027-08-12 → 2027-08-16 (+4d) | 2027-09-05 → 2027-09-09 (+4d) |  |  |  |  |  |
| DAR-OTE-5010 | Operational trials (technical rehearsals) | 2027-08-12 → 2027-08-16 (+4d) | 2027-08-31 → 2027-09-04 (+4d) |  |  | 8d → 4d |  |  |
| DAR-OTE-5030 | Ticketing & POS systems trial | 2027-08-15 → 2027-08-19 (+4d) | 2027-08-21 → 2027-08-25 (+4d) |  |  | 23d → 19d |  |  |
| DAR-OTE-5020 | Emergency drills with civil defence | 2027-09-01 → 2027-09-05 (+4d) | 2027-09-05 → 2027-09-09 (+4d) |  |  | 8d → 4d |  |  |
| D1R | **Day 1 Readiness** | 2027-09-20 → 2027-09-26 (+6d) | 2027-09-29 → 2027-10-04 (+5d) |  |  |  |  |  |
| GAT | **Readiness Gates** | 2027-09-20 → 2027-09-26 (+6d) | 2027-09-29 → 2027-10-04 (+5d) |  |  |  |  |  |
| DAR-D1R-6010 | Operational readiness assessment | 2027-09-20 → 2027-09-26 (+6d) | 2027-09-29 → 2027-10-04 (+5d) |  |  | 6d → 3d |  |  |
| DAR-D1R-M020 | Asset Day 1 ready | 2027-09-29 → 2027-10-04 (+5d) | 2027-09-29 → 2027-10-04 (+5d) |  |  | 10d → 5d |  |  |
| PBR-CON-1120 | Main plant installation (chillers, switchgear, AHUs) |  | 2026-08-05 A |  | 83% → 100% | 0d → none |  |  |
| PBR-CON-1131 | MEP second fix - Zone A | 2026-08-06 A |  |  | 0% → 45% |  |  |  |

| ID | Task | Start | Finish | Duration | Complete | Total float | Other |
| --- | --- | --- | --- | --- | --- | --- | --- |
| PBR-CON-1132 | MEP second fix - Zone B | 2026-09-22 → 2026-08-25 (-28d) |  |  |  |  |  |
| PBR-CON-9010 | Construction supervision & site management (LOE) |  |  |  | 47% → 53% |  |  |
| PBR-CON-1310 | Shell & core handover to tenants |  | 2026-08-26 A |  | 20% → 100% | 1d → none |  |
| TNC | **Testing & Commissioning** | 2026-12-30 → 2027-01-12 (+13d) | 2027-04-03 → 2027-04-16 (+13d) |  |  |  |  |
| COM | **Systems Commissioning** | 2027-01-19 → 2027-02-01 (+13d) | 2027-03-19 → 2027-04-01 (+13d) |  |  |  |  |
| PBR-TNC-2110 | HVAC & chilled water commissioning | 2027-01-19 → 2027-02-01 (+13d) | 2027-02-12 → 2027-02-25 (+13d) |  |  | 0d → -13d |  |
| PBR-TNC-2120 | Electrical systems commissioning | 2027-01-19 → 2027-02-01 (+13d) | 2027-02-07 → 2027-02-20 (+13d) |  |  | 5d → -8d |  |
| PBR-TNC-2130 | Fire & life safety systems commissioning | 2027-02-08 → 2027-02-21 (+13d) | 2027-03-04 → 2027-03-17 (+13d) |  |  | 15d → 2d |  |
| PBR-TNC-2140 | Tenant systems integration testing | 2027-02-11 → 2027-02-21 (+10d) | 2027-03-02 → 2027-03-12 (+10d) |  |  | 2d → -8d |  |
| PBR-TNC-2160 | Vertical transportation testing & certification | 2027-02-08 → 2027-02-21 (+13d) | 2027-02-17 → 2027-03-02 (+13d) |  |  | 30d → 17d |  |
| PBR-TNC-2150 | BMS & ELV commissioning | 2027-02-13 → 2027-02-26 (+13d) | 2027-03-04 → 2027-03-17 (+13d) |  |  | 0d → -13d |  |
| PBR-TNC-2145 | Kitchen extract & fire suppression testing | 2027-03-03 → 2027-03-13 (+10d) | 2027-03-17 → 2027-03-27 (+10d) |  |  | 2d → -8d |  |
| PBR-TNC-2170 | Security systems (CCTV, access control) commissioning | 2027-03-05 → 2027-03-18 (+13d) | 2027-03-19 → 2027-04-01 (+13d) |  |  | 0d → -13d |  |
| IST | **Integrated Systems Testing** | 2027-03-20 → 2027-04-02 (+13d) | 2027-04-03 → 2027-04-16 (+13d) |  |  |  |  |
| PBR-TNC-2210 | Integrated systems test (IST) | 2027-03-20 → 2027-04-02 (+13d) | 2027-04-03 → 2027-04-16 (+13d) |  |  | 0d → -13d |  |
| PBR-TNC-M220 | T&C complete (ICA certificate) | 2027-04-03 → 2027-04-16 (+13d) | 2027-04-03 → 2027-04-16 (+13d) |  |  | 0d → -13d |  |
| PRE | **Pre-commissioning** | 2026-12-30 → 2027-01-12 (+13d) | 2027-01-18 → 2027-01-31 (+13d) |  |  |  |  |
| PBR-TNC-2010 | Pre-commissioning checks (electrical & mechanical) | 2026-12-30 → 2027-01-12 (+13d) | 2027-01-18 → 2027-01-31 (+13d) |  |  | 0d → -13d |  |
| HND | **Completion & Handover** | 2027-04-04 → 2027-04-18 (+14d) |  |  |  |  |  |
| PBR-HOV-3210 | Handover documentation (O&M, as-builts, warranties) | 2027-04-04 → 2027-04-18 (+14d) | 2027-05-06 → 2027-05-27 (+21d) |  |  | 70d → 60d |  |
| PBR-OPM-M120 | Operator site access granted | 2027-04-04 → 2027-04-17 (+13d) | 2027-04-04 → 2027-04-17 (+13d) |  |  | 66d → 55d |  |
| PEW-CON-9010 | Enabling works supervision (LOE) | 2026-08-01 A |  |  | 0% → 8% |  |  |
| PEW-CON-1010 | Main substation civil works | 2026-08-01 A |  |  | 0% → 57% |  |  |
| RDS | **Roads** |  | 2026-10-10 → 2026-11-07 (+28d) |  |  |  |  |
| PEW-CON-1110 | Primary access road & junctions |  | 2026-08-23 → 2026-09-20 (+28d) |  |  | 252d → 228d |  |
| PEW-CON-1120 | Internal roads, lighting & signage | 2026-08-24 → 2026-09-21 (+28d) | 2026-10-04 → 2026-11-01 (+28d) |  |  | 252d → 228d |  |
| PEW-CON-1160 | Transport hub & car park structure | 2026-08-24 → 2026-09-21 (+28d) | 2026-10-10 → 2026-11-07 (+28d) |  |  | 290d → 266d |  |
| PWR | **Power** |  | 2026-11-27 → 2027-01-11 (+45d) |  |  |  |  |
| PEW-TNC-2030 | North loop HV commissioning & energisation | 2026-11-18 → 2027-01-02 (+45d) | 2026-11-27 → 2027-01-11 (+45d) |  |  | 32d → -13d | constraint none → start on or after 2027-01-02 |
| PEW-TNC-M031 | Permanent power available - North loop | 2026-11-27 → 2027-01-11 (+45d) | 2026-11-27 → 2027-01-11 (+45d) |  |  | 32d → -13d |  |
| HOV | **Handover** | 2026-10-05 → 2026-11-02 (+28d) |  |  |  |  |  |
| APR | **Authority Inspections & Approvals** | 2026-10-05 → 2026-11-02 (+28d) |  |  |  |  |  |
| PEW-HOV-3020 | Road authority inspection & handover | 2026-10-05 → 2026-11-02 (+28d) | 2026-10-18 → 2026-11-15 (+28d) |  |  | 249d → 229d |  |
| PRG | **Programme Integration & Day 1** |  | 2027-10-06 → 2027-10-11 (+5d) |  |  |  |  |
| PRG-OPM-4010 | Destination-wide recruitment campaign |  | 2026-08-20 A |  | 84% → 100% | 76d → none |  |
| PRG-OPM-4030 | FM mobilisation & maintenance contracts live | 2027-03-31 → 2027-04-05 (+5d) | 2027-06-01 → 2027-06-06 (+5d) |  |  | 86d → 83d |  |
| PRG-OPM-4020 | Service culture & guest-experience training | 2026-08-23 A |  |  | 0% → 13% |  |  |
| OTE | **Operational Trials & Test Events** |  | 2027-09-28 → 2027-10-02 (+4d) |  |  |  |  |
| TEV | **Test Events** | 2027-09-20 → 2027-09-25 (+5d) | 2027-09-28 → 2027-10-02 (+4d) |  |  |  |  |
| PRG-OTE-5020 | Integrated destination test event (all assets) | 2027-09-20 → 2027-09-25 (+5d) | 2027-09-25 → 2027-09-29 (+4d) |  |  | 11d → 7d |  |
| PRG-OTE-5030 | Opening ceremony operational rehearsal | 2027-09-26 → 2027-09-30 (+4d) | 2027-09-28 → 2027-10-02 (+4d) |  |  | 11d → 7d |  |
| D1R | **Day 1 Readiness** |  | 2027-10-06 → 2027-10-11 (+5d) |  |  |  |  |
| GAT | **Readiness Gates** |  | 2027-10-06 → 2027-10-11 (+5d) |  |  |  |  |
| PRG-D1R-M010 | RG1 Construction complete gate | 2027-03-30 → 2027-04-04 (+5d) | 2027-03-30 → 2027-04-04 (+5d) |  |  | 127d → 122d |  |
| PRG-D1R-6010 | Day 1 go/no-go readiness review | 2027-09-30 → 2027-10-05 (+5d) | 2027-10-06 → 2027-10-11 (+5d) |  |  | 6d → 3d |  |
| PRG-D1R-M040 | RG4 Day 1 go/no-go gate | 2027-10-06 → 2027-10-11 (+5d) | 2027-10-06 → 2027-10-11 (+5d) |  |  | 8d → 3d |  |
| PRG-D1R-M999 | Day 1 Opening | 2027-10-06 → 2027-10-11 (+5d) | 2027-10-06 → 2027-10-11 (+5d) |  |  | 8d → 3d |  |
| MGT | **Management & Supervision** |  | 2027-10-06 → 2027-10-11 (+5d) |  |  |  |  |
| PRG-D1R-9010 | Programme management & controls (LOE) |  | 2027-10-06 → 2027-10-11 (+5d) | 655d → 658d | 54% → 57% | 6d → 3d |  |

## Version 6 (data date 2026-09-24, saved 2026-09-24, file DOP_UPD_2026-09-24.xer)

Note of the change: Destination Opening Programme: schedule intelligence

Last finish 2027-10-11 → 2027-10-28 (+17d). Complete tasks 42 → 45.

Added:

| ID | Task | Duration | Start | Finish | Predecessors |
| --- | --- | --- | --- | --- | --- |
| DAR-CON-1250 | Fire strategy changes - additional smoke extract works | 10d | 2026-11-24 | 2026-12-05 | DAR-CON-1132 |

Changed:

| ID | Task | Start | Finish | Duration | Complete | Total float | Predecessors |
| --- | --- | --- | --- | --- | --- | --- | --- |
| MTP-CON-1132 | MEP second fix - Zone B |  |  |  | 5% → 62% |  |  |
| MTP-CON-1140 | BMS & ELV installation |  |  |  | 6% → 71% |  |  |
| MTP-CON-1135 | MEP second fix - Zone C (BOH & plant rooms) | 2026-09-12 A |  |  | 0% → 29% |  |  |
| MTP-CON-9010 | Construction supervision & site management (LOE) |  |  |  | 65% → 71% |  |  |
| MTP-CON-1320 | Ride control systems & ride enclosures |  | 2026-09-07 A |  | 75% → 100% | 50d → none |  |
| MTP-CON-1330 | Theming & show elements | 2026-09-08 A |  |  | 0% → 30% |  |  |
| MTP-OPM-4130 | On-site familiarisation & equipment training |  |  |  |  |  | MTP-HOV-M130, MTP-OPM-4110, MTP-OPM-M120 → MTP-HOV-M130, MTP-OPM-4030, MTP-OPM-4110, MTP-OPM-M120 |
| MTP-OTE-5030 | Ticketing & POS systems trial |  |  |  |  |  | MTP-OTE-5010 SS+3d, PRG-OTE-5010 → MTP-OPM-4030, MTP-OTE-5010 SS+3d, PRG-OTE-5010 |
| LWP-CON-1131 | MEP second fix - Zone A |  |  |  | 10% → 68% |  |  |
| LWP-CON-9010 | Construction supervision & site management (LOE) |  |  |  | 49% → 55% |  |  |
| LWP-CON-1310 | Slide towers & flumes installation |  |  |  | 9% → 61% |  |  |
| DAR | **Dune Arena** |  | 2027-10-04 → 2027-10-21 (+17d) |  |  |  |  |
| CON | **Construction** |  | 2027-04-04 → 2027-04-26 (+22d) |  |  |  |  |
| EXT | **External Works** | 2027-01-03 → 2027-01-26 (+23d) | 2027-04-04 → 2027-04-26 (+22d) |  |  |  |  |
| DAR-CON-1410 | External works & landscaping | 2027-01-03 → 2027-01-26 (+23d) | 2027-02-17 → 2027-03-17 (+28d) |  |  | 45d → 25d |  |
| DAR-CON-1430 | Car parks & drop-off | 2027-01-14 → 2027-02-07 (+24d) | 2027-02-17 → 2027-03-17 (+28d) |  |  | 45d → 25d |  |
| DAR-CON-M142 | Ready for commissioning (construction complete) | 2027-04-04 → 2027-04-26 (+22d) | 2027-04-04 → 2027-04-26 (+22d) |  |  | 10d → -9d |  |
| FIT | **Fit-out & Finishes** |  | 2027-04-04 → 2027-04-26 (+22d) |  |  |  |  |
| DAR-CON-1220 | Front-of-house fit-out & finishes | 2026-11-12 → 2026-12-06 (+24d) | 2027-01-02 → 2027-01-25 (+23d) |  |  | 11d → -9d | DAR-CON-1132 FF+10d, DAR-CON-1132 SS+30d, DAR-CON-1240 → DAR-CON-1132 FF+10d, DAR-CON-1132 SS+30d, DAR-CON-1240, DAR-CON-1250 |
| DAR-CON-1225 | FOH final finishes & joinery | 2027-01-04 → 2027-01-26 (+22d) | 2027-02-24 → 2027-03-22 (+26d) |  |  | 10d → -9d |  |
| DAR-CON-1230 | Signage & wayfinding | 2027-02-25 → 2027-03-23 (+26d) | 2027-04-04 → 2027-04-26 (+22d) |  |  | 10d → -9d |  |
| DAR-CON-1131 | MEP second fix - Zone A |  |  |  | 20% → 73% | 10d → -9d |  |
| MGT | **Management & Supervision** |  | 2027-04-04 → 2027-04-26 (+22d) |  |  |  |  |
| DAR-CON-9010 | Construction supervision & site management (LOE) |  | 2027-04-04 → 2027-04-26 (+22d) | 368d → 387d | 50% → 53% | 10d → -9d |  |
| DAR-CON-1310 | Seating bowl & retractable seating |  |  |  | 20% → 73% |  |  |
| TNC | **Testing & Commissioning** | 2027-01-12 → 2027-01-26 (+14d) | 2027-04-19 → 2027-05-11 (+22d) |  |  |  |  |
| COM | **Systems Commissioning** | 2027-01-17 → 2027-01-31 (+14d) | 2027-04-04 → 2027-04-06 (+2d) |  |  |  |  |
| DAR-TNC-2120 | Electrical systems commissioning | 2027-01-17 → 2027-01-31 (+14d) | 2027-02-05 → 2027-02-19 (+14d) |  |  | 30d → 16d |  |
| DAR-TNC-2110 | HVAC & chilled water commissioning | 2027-02-01 → 2027-02-15 (+14d) | 2027-02-20 → 2027-03-06 (+14d) |  |  | 24d → 10d |  |
| DAR-TNC-2130 | Fire & life safety systems commissioning | 2027-02-06 → 2027-02-20 (+14d) | 2027-02-26 → 2027-03-17 (+19d) | 21d → 26d |  | 49d → 30d | DAR-TNC-2120 → DAR-CON-1250, DAR-TNC-2120 |
| DAR-TNC-2160 | Vertical transportation testing & certification | 2027-02-06 → 2027-02-20 (+14d) | 2027-02-15 → 2027-03-01 (+14d) |  |  | 60d → 46d |  |
| DAR-TNC-2150 | BMS & ELV commissioning | 2027-02-21 → 2027-03-07 (+14d) | 2027-03-08 → 2027-03-22 (+14d) |  |  | 24d → 10d |  |
| DAR-TNC-2170 | Security systems (CCTV, access control) commissioning | 2027-03-09 → 2027-03-23 (+14d) | 2027-03-23 → 2027-04-06 (+14d) |  |  | 24d → 10d |  |
| IST | **Integrated Systems Testing** | 2027-04-05 → 2027-04-27 (+22d) | 2027-04-19 → 2027-05-11 (+22d) |  |  |  |  |
| DAR-TNC-2210 | Integrated systems test (IST) | 2027-04-05 → 2027-04-27 (+22d) | 2027-04-19 → 2027-05-11 (+22d) |  |  | 12d → -10d |  |
| DAR-TNC-M220 | T&C complete (ICA certificate) | 2027-04-19 → 2027-05-11 (+22d) | 2027-04-19 → 2027-05-11 (+22d) |  |  | 12d → -10d |  |
| PRE | **Pre-commissioning** | 2027-01-12 → 2027-01-26 (+14d) | 2027-01-31 → 2027-02-14 (+14d) |  |  |  |  |
| DAR-TNC-2010 | Pre-commissioning checks (electrical & mechanical) | 2027-01-12 → 2027-01-26 (+14d) | 2027-01-31 → 2027-02-14 (+14d) |  |  | 24d → 10d |  |
| HOV | **Handover** | 2027-04-05 → 2027-04-27 (+22d) | 2027-06-14 → 2027-07-06 (+22d) |  |  |  |  |
| APR | **Authority Inspections & Approvals** | 2027-04-20 → 2027-05-12 (+22d) | 2027-06-14 → 2027-07-06 (+22d) |  |  |  |  |
| DAR-HOV-3110 | Civil defence & fire authority inspection | 2027-04-20 → 2027-05-12 (+22d) | 2027-05-10 → 2027-06-08 (+29d) |  |  | 8d → -8d |  |
| DAR-HOV-3120 | Completion certificate application & review | 2027-05-11 → 2027-06-09 (+29d) | 2027-06-14 → 2027-07-06 (+22d) |  |  | 8d → -8d |  |
| DAR-HOV-M130 | Occupancy certificate issued | 2027-06-14 → 2027-07-06 (+22d) | 2027-06-14 → 2027-07-06 (+22d) |  |  | 8d → -8d |  |
| HND | **Completion & Handover** | 2027-04-20 → 2027-05-12 (+22d) | 2027-06-14 → 2027-07-06 (+22d) |  |  |  |  |
| DAR-HOV-3210 | Handover documentation (O&M, as-builts, warranties) | 2027-04-20 → 2027-05-12 (+22d) | 2027-05-31 → 2027-06-22 (+22d) |  |  | 58d → 42d |  |
| DAR-HOV-3220 | Defects walkdown with operator | 2027-05-10 → 2027-06-07 (+28d) | 2027-05-15 → 2027-06-12 (+28d) |  |  | 78d → 59d |  |
| DAR-HOV-M230 | Handover to operator | 2027-06-14 → 2027-07-06 (+22d) | 2027-06-14 → 2027-07-06 (+22d) |  |  | 57d → 38d |  |
| SNG | **Snagging & Defects** | 2027-04-05 → 2027-04-27 (+22d) | 2027-05-09 → 2027-06-06 (+28d) |  |  |  |  |
| DAR-HOV-3010 | Snagging & defects rectification | 2027-04-05 → 2027-04-27 (+22d) | 2027-05-09 → 2027-06-06 (+28d) |  |  | 12d → -7d |  |
| OPM | **Operator Mobilisation & Training** |  | 2027-08-15 → 2027-09-02 (+18d) |  |  |  |  |
| TRN | **Training & Familiarisation** |  | 2027-08-15 → 2027-09-02 (+18d) |  |  |  |  |
| DAR-OPM-4130 | On-site familiarisation & equipment training | 2027-06-19 → 2027-07-07 (+18d) | 2027-07-18 → 2027-08-05 (+18d) |  |  | 6d → -12d |  |
| DAR-OPM-4140 | SOPs & emergency procedures validated | 2027-07-19 → 2027-08-08 (+20d) | 2027-08-15 → 2027-09-02 (+18d) |  |  | 4d → -10d |  |
| DAR-OPM-M150 | Operator trained & certified | 2027-08-15 → 2027-09-02 (+18d) | 2027-08-15 → 2027-09-02 (+18d) |  |  | 4d → -10d |  |
| OTE | **Operational Trials & Test Events** | 2027-08-16 → 2027-09-03 (+18d) | 2027-09-24 → 2027-10-12 (+18d) |  |  |  |  |
| TEV | **Test Events** | 2027-09-10 → 2027-09-29 (+19d) | 2027-09-24 → 2027-10-12 (+18d) |  |  |  |  |
| DAR-OTE-5110 | Test events (invited guests) | 2027-09-10 → 2027-09-29 (+19d) | 2027-09-24 → 2027-10-12 (+18d) |  |  | 4d → -14d |  |
| TRL | **Operational Trials** | 2027-08-16 → 2027-09-03 (+18d) | 2027-09-09 → 2027-09-28 (+19d) |  |  |  |  |
| DAR-OTE-5010 | Operational trials (technical rehearsals) | 2027-08-16 → 2027-09-03 (+18d) | 2027-09-04 → 2027-09-22 (+18d) |  |  | 4d → -14d |  |
| DAR-OTE-5030 | Ticketing & POS systems trial | 2027-08-19 → 2027-09-06 (+18d) | 2027-08-25 → 2027-09-12 (+18d) |  |  | 19d → 1d |  |
| DAR-OTE-5020 | Emergency drills with civil defence | 2027-09-05 → 2027-09-24 (+19d) | 2027-09-09 → 2027-09-28 (+19d) |  |  | 4d → -14d |  |
| D1R | **Day 1 Readiness** | 2027-09-26 → 2027-10-13 (+17d) | 2027-10-04 → 2027-10-21 (+17d) |  |  |  |  |
| GAT | **Readiness Gates** | 2027-09-26 → 2027-10-13 (+17d) | 2027-10-04 → 2027-10-21 (+17d) |  |  |  |  |
| DAR-D1R-6010 | Operational readiness assessment | 2027-09-26 → 2027-10-13 (+17d) | 2027-10-04 → 2027-10-21 (+17d) |  |  | 3d → -10d |  |
| DAR-D1R-M020 | Asset Day 1 ready | 2027-10-04 → 2027-10-21 (+17d) | 2027-10-04 → 2027-10-21 (+17d) |  |  | 5d → -12d |  |
| PBR-CON-1131 | MEP second fix - Zone A |  | 2026-09-21 A |  | 45% → 100% | 0d → none |  |
| PBR-CON-1132 | MEP second fix - Zone B | 2026-08-25 → 2026-09-22 A (+28d) |  |  | 0% → 3% |  |  |
| PBR-CON-1140 | BMS & ELV installation | 2026-09-22 A |  |  | 0% → 3% |  |  |
| PBR-CON-9010 | Construction supervision & site management (LOE) |  |  |  | 53% → 60% |  |  |
| PEW-CON-1050 | District cooling plant - civil & structure | 2026-09-05 A |  |  | 0% → 36% |  |  |

| ID | Task | Start | Finish | Duration | Complete | Total float |
| --- | --- | --- | --- | --- | --- | --- |
| PEW-CON-9010 | Enabling works supervision (LOE) |  |  |  | 8% → 17% |  |
| PEW-CON-1010 | Main substation civil works |  | 2026-09-15 A |  | 57% → 100% | 26d → none |
| PEW-CON-1020 | Main substation building & equipment installation | 2026-09-16 A |  |  | 0% → 14% |  |
| PEW-CON-1030 | HV cabling | 2026-09-16 A |  |  | 0% → 15% |  |
| PEW-CON-1040 | HV cabling | 2026-09-16 A |  |  | 0% → 14% |  |
| RDS | **Roads** |  | 2026-11-07 → 2026-12-03 (+26d) |  |  |  |
| PEW-CON-1110 | Primary access road & junctions |  | 2026-09-20 → 2026-10-18 (+28d) |  |  | 228d → 205d |
| PEW-CON-1120 | Internal roads, lighting & signage | 2026-09-21 → 2026-10-19 (+28d) | 2026-11-01 → 2026-11-28 (+27d) |  |  | 228d → 205d |
| PEW-CON-1160 | Transport hub & car park structure | 2026-09-21 → 2026-10-19 (+28d) | 2026-11-07 → 2026-12-03 (+26d) |  |  | 266d → 243d |
| HOV | **Handover** | 2026-11-02 → 2026-11-29 (+27d) |  |  |  |  |
| APR | **Authority Inspections & Approvals** | 2026-11-02 → 2026-11-29 (+27d) |  |  |  |  |
| PEW-HOV-3020 | Road authority inspection & handover | 2026-11-02 → 2026-11-29 (+27d) | 2026-11-15 → 2026-12-10 (+25d) |  |  | 229d → 210d |
| PRG | **Programme Integration & Day 1** |  | 2027-10-11 → 2027-10-28 (+17d) |  |  |  |
| PRG-OPM-4030 | FM mobilisation & maintenance contracts live | 2027-04-05 → 2027-04-27 (+22d) | 2027-06-06 → 2027-06-28 (+22d) |  |  | 83d → 67d |
| PRG-OPM-4020 | Service culture & guest-experience training |  | 2026-10-04 → 2026-10-29 (+25d) |  |  | 182d → 163d |
| PRG-OPM-4060 | Guest services & contact centre readiness | 2026-10-05 → 2026-11-01 (+27d) | 2026-11-01 → 2026-11-26 (+25d) |  |  | 182d → 163d |
| OTE | **Operational Trials & Test Events** |  | 2027-10-02 → 2027-10-20 (+18d) |  |  |  |
| TEV | **Test Events** | 2027-09-25 → 2027-10-13 (+18d) | 2027-10-02 → 2027-10-20 (+18d) |  |  |  |
| PRG-OTE-5020 | Integrated destination test event (all assets) | 2027-09-25 → 2027-10-13 (+18d) | 2027-09-29 → 2027-10-17 (+18d) |  |  | 7d → -11d |
| PRG-OTE-5030 | Opening ceremony operational rehearsal | 2027-09-30 → 2027-10-18 (+18d) | 2027-10-02 → 2027-10-20 (+18d) |  |  | 7d → -11d |
| D1R | **Day 1 Readiness** |  | 2027-10-11 → 2027-10-28 (+17d) |  |  |  |
| GAT | **Readiness Gates** |  | 2027-10-11 → 2027-10-28 (+17d) |  |  |  |
| PRG-D1R-M010 | RG1 Construction complete gate | 2027-04-04 → 2027-04-26 (+22d) | 2027-04-04 → 2027-04-26 (+22d) |  |  | 122d → 100d |
| PRG-D1R-M030 | RG3 Ready to operate gate | 2027-08-19 → 2027-09-02 (+14d) | 2027-08-19 → 2027-09-02 (+14d) |  |  | 35d → 21d |
| PRG-D1R-6020 | Day 1 command centre & hypercare set-up | 2027-08-20 → 2027-09-03 (+14d) | 2027-09-03 → 2027-09-17 (+14d) |  |  | 35d → 21d |
| PRG-D1R-6010 | Day 1 go/no-go readiness review | 2027-10-05 → 2027-10-24 (+19d) | 2027-10-11 → 2027-10-28 (+17d) |  |  | 3d → -10d |
| PRG-D1R-M040 | RG4 Day 1 go/no-go gate | 2027-10-11 → 2027-10-28 (+17d) | 2027-10-11 → 2027-10-28 (+17d) |  |  | 3d → -14d |
| PRG-D1R-M999 | Day 1 Opening | 2027-10-11 → 2027-10-28 (+17d) | 2027-10-11 → 2027-10-28 (+17d) |  |  | 3d → -14d |
| MGT | **Management & Supervision** |  | 2027-10-11 → 2027-10-28 (+17d) |  |  |  |
| PRG-D1R-9010 | Programme management & controls (LOE) |  | 2027-10-11 → 2027-10-28 (+17d) | 658d → 671d | 57% → 59% | 3d → -10d |

## Version 7 (data date 2026-09-24, saved 2026-09-24, file DOP_UPD_2026-09-24.xer)

Note of the change: feat(data): synthetic integrated master schedule, storyline, progress simulation and P6 XER export

Last finish stays 2027-10-28.

Changed:

| ID | Task | Start | Finish | Complete | Total float |
| --- | --- | --- | --- | --- | --- |
| PRG-OPM-4020 | Service culture & guest-experience training |  | 2026-10-29 → 2026-10-04 (-25d) | 13% → 77% | 163d → 182d |
| PRG-OPM-4060 | Guest services & contact centre readiness | 2026-11-01 → 2026-10-05 (-27d) | 2026-11-26 → 2026-11-01 (-25d) |  | 163d → 182d |

## Version 8 (data date 2026-10-29, saved 2026-10-29, file DOP_UPD_2026-10-29.xer)

Note of the change: Destination Opening Programme: schedule intelligence

Last finish 2027-10-28 → 2027-10-21 (-7d). Complete tasks 45 → 55.

Changed:

| ID | Task | Start | Finish | Duration | Complete | Total float | Other |
| --- | --- | --- | --- | --- | --- | --- | --- |
| MTP-CON-1210 | Back-of-house fit-out | 2026-10-12 A |  |  | 0% → 38% |  |  |
| MTP-CON-1220 | Front-of-house fit-out & finishes | 2026-10-12 A |  |  | 0% → 34% |  |  |
| MTP-CON-1132 | MEP second fix - Zone B |  | 2026-10-11 A |  | 62% → 100% | 22d → none |  |
| MTP-CON-1140 | BMS & ELV installation |  | 2026-10-05 A |  | 71% → 100% | 71d → none |  |
| MTP-CON-1135 | MEP second fix - Zone C (BOH & plant rooms) |  | 2026-10-22 A |  | 29% → 100% | 56d → none |  |
| MTP-CON-1150 | Vertical transportation installation | 2026-10-12 A |  |  | 0% → 43% |  |  |
| MTP-CON-9010 | Construction supervision & site management (LOE) |  |  |  | 71% → 78% |  |  |
| MTP-CON-1330 | Theming & show elements |  |  |  | 30% → 98% |  |  |
| MTP-OPM-4010 | Recruitment wave 1 (leadership & technical) | 2026-10-18 A |  |  | 0% → 22% |  |  |
| LWP-CON-1131 | MEP second fix - Zone A |  | 2026-10-08 A |  | 68% → 100% | 24d → none |  |
| LWP-CON-1132 | MEP second fix - Zone B | 2026-10-10 A |  |  | 0% → 43% |  |  |
| LWP-CON-1140 | BMS & ELV installation | 2026-10-10 A |  |  | 0% → 49% |  |  |
| LWP-CON-1135 | MEP second fix - Zone C (BOH & plant rooms) | 2026-10-27 A |  |  | 0% → 6% |  |  |
| LWP-CON-9010 | Construction supervision & site management (LOE) |  |  |  | 55% → 64% |  |  |
| LWP-CON-1310 | Slide towers & flumes installation |  | 2026-10-13 A |  | 61% → 100% | 29d → none |  |
| LWP-CON-1320 | Water treatment & filtration plant installation | 2026-10-14 A |  |  | 0% → 32% |  |  |
| LWP-OPM-4020 | Onboarding & induction |  |  |  |  | 0d → 41d | constraint mandatory start 2027-02-21 → none |
| DAR | **Dune Arena** |  | 2027-10-21 → 2027-10-14 (-7d) |  |  |  |  |
| CON | **Construction** |  | 2027-04-26 → 2027-04-20 (-6d) |  |  |  |  |
| EXT | **External Works** | 2027-01-26 → 2027-01-20 (-6d) | 2027-04-26 → 2027-04-20 (-6d) |  |  |  |  |
| DAR-CON-1410 | External works & landscaping | 2027-01-26 → 2027-01-20 (-6d) | 2027-03-17 → 2027-03-08 (-9d) |  |  | 25d → 30d |  |
| DAR-CON-1430 | Car parks & drop-off | 2027-02-07 → 2027-02-01 (-6d) | 2027-03-17 → 2027-03-08 (-9d) |  |  | 25d → 30d |  |
| DAR-CON-M142 | Ready for commissioning (construction complete) | 2027-04-26 → 2027-04-20 (-6d) | 2027-04-26 → 2027-04-20 (-6d) |  |  | -9d → -4d |  |
| FIT | **Fit-out & Finishes** |  | 2027-04-26 → 2027-04-20 (-6d) |  |  |  |  |
| DAR-CON-1240 | Additional acoustic treatment - seating bowl | 2026-10-08 A | 2026-10-25 A |  | 0% → 100% | 26d → none |  |
| DAR-CON-1210 | Back-of-house fit-out | 2026-11-24 → 2026-11-21 (-3d) | 2027-01-09 → 2027-01-05 (-4d) |  |  | 23d → 26d |  |
| DAR-CON-1220 | Front-of-house fit-out & finishes | 2026-12-06 → 2026-11-30 (-6d) | 2027-01-25 → 2027-01-19 (-6d) |  |  | -9d → -4d |  |
| DAR-CON-1225 | FOH final finishes & joinery | 2027-01-26 → 2027-01-20 (-6d) | 2027-03-22 → 2027-03-16 (-6d) |  |  | -9d → -4d |  |
| DAR-CON-1230 | Signage & wayfinding | 2027-03-23 → 2027-03-17 (-6d) | 2027-04-26 → 2027-04-20 (-6d) |  |  | -9d → -4d |  |
| MEP | **MEP Installation** |  | 2027-01-03 → 2026-12-30 (-4d) |  |  |  |  |
| DAR-CON-1131 | MEP second fix - Zone A |  | 2026-10-07 A |  | 73% → 100% | -9d → none |  |
| DAR-CON-1132 | MEP second fix - Zone B | 2026-10-08 A | 2026-11-23 → 2026-11-19 (-4d) | 40d → 37d | 0% → 49% | -9d → -7d |  |
| DAR-CON-1140 | BMS & ELV installation | 2026-10-08 A |  |  | 0% → 51% |  |  |
| DAR-CON-1135 | MEP second fix - Zone C (BOH & plant rooms) | 2026-10-26 A |  |  | 0% → 9% |  |  |
| DAR-CON-1150 | Vertical transportation installation | 2026-11-24 → 2026-11-21 (-3d) | 2027-01-03 → 2026-12-30 (-4d) |  |  | 10d → 13d |  |
| DAR-CON-1250 | Fire strategy changes - additional smoke extract works | 2026-11-24 → 2026-11-21 (-3d) | 2026-12-05 → 2026-11-29 (-6d) | 10d → 8d |  | -9d → -4d |  |
| MGT | **Management & Supervision** |  | 2027-04-26 → 2027-04-20 (-6d) |  |  |  |  |
| DAR-CON-9010 | Construction supervision & site management (LOE) |  | 2027-04-26 → 2027-04-20 (-6d) | 387d → 382d | 53% → 62% | -9d → -4d |  |
| DAR-CON-1310 | Seating bowl & retractable seating |  | 2026-10-07 A |  | 73% → 100% | 10d → none |  |
| DAR-CON-1320 | Show systems (AV, rigging, LED) installation | 2026-10-08 A |  |  | 0% → 41% |  |  |
| TNC | **Testing & Commissioning** | 2027-01-26 → 2027-01-20 (-6d) | 2027-05-11 → 2027-05-05 (-6d) |  |  |  |  |
| COM | **Systems Commissioning** | 2027-01-31 → 2027-01-25 (-6d) | 2027-04-06 → 2027-04-04 (-2d) |  |  |  |  |
| DAR-TNC-2120 | Electrical systems commissioning | 2027-01-31 → 2027-01-25 (-6d) | 2027-02-19 → 2027-02-13 (-6d) |  |  | 16d → 22d |  |
| DAR-TNC-2110 | HVAC & chilled water commissioning | 2027-02-15 → 2027-02-09 (-6d) | 2027-03-06 → 2027-02-28 (-6d) |  |  | 10d → 16d |  |
| DAR-TNC-2130 | Fire & life safety systems commissioning | 2027-02-20 → 2027-02-14 (-6d) | 2027-03-17 → 2027-03-11 (-6d) |  |  | 30d → 36d |  |
| DAR-TNC-2160 | Vertical transportation testing & certification | 2027-02-20 → 2027-02-14 (-6d) | 2027-03-01 → 2027-02-23 (-6d) |  |  | 46d → 52d |  |
| DAR-TNC-2150 | BMS & ELV commissioning | 2027-03-07 → 2027-03-01 (-6d) | 2027-03-22 → 2027-03-16 (-6d) |  |  | 10d → 16d |  |
| DAR-TNC-2170 | Security systems (CCTV, access control) commissioning | 2027-03-23 → 2027-03-17 (-6d) | 2027-04-06 → 2027-03-31 (-6d) |  |  | 10d → 16d |  |
| IST | **Integrated Systems Testing** | 2027-04-27 → 2027-04-21 (-6d) | 2027-05-11 → 2027-05-05 (-6d) |  |  |  |  |
| DAR-TNC-2210 | Integrated systems test (IST) | 2027-04-27 → 2027-04-21 (-6d) | 2027-05-11 → 2027-05-05 (-6d) |  |  | -10d → -4d |  |
| DAR-TNC-M220 | T&C complete (ICA certificate) | 2027-05-11 → 2027-05-05 (-6d) | 2027-05-11 → 2027-05-05 (-6d) |  |  | -10d → -4d |  |
| PRE | **Pre-commissioning** | 2027-01-26 → 2027-01-20 (-6d) | 2027-02-14 → 2027-02-08 (-6d) |  |  |  |  |
| DAR-TNC-2010 | Pre-commissioning checks (electrical & mechanical) | 2027-01-26 → 2027-01-20 (-6d) | 2027-02-14 → 2027-02-08 (-6d) |  |  | 10d → 16d |  |
| HOV | **Handover** | 2027-04-27 → 2027-04-21 (-6d) | 2027-07-06 → 2027-06-30 (-6d) |  |  |  |  |
| APR | **Authority Inspections & Approvals** | 2027-05-12 → 2027-05-06 (-6d) | 2027-07-06 → 2027-06-30 (-6d) |  |  |  |  |
| DAR-HOV-3110 | Civil defence & fire authority inspection | 2027-05-12 → 2027-05-06 (-6d) | 2027-06-08 → 2027-06-02 (-6d) |  |  | -8d → -4d |  |
| DAR-HOV-3120 | Completion certificate application & review | 2027-06-09 → 2027-06-03 (-6d) | 2027-07-06 → 2027-06-30 (-6d) |  |  | -8d → -4d |  |
| DAR-HOV-M130 | Occupancy certificate issued | 2027-07-06 → 2027-06-30 (-6d) | 2027-07-06 → 2027-06-30 (-6d) |  |  | -8d → -4d |  |
| HND | **Completion & Handover** | 2027-05-12 → 2027-05-06 (-6d) | 2027-07-06 → 2027-06-30 (-6d) |  |  |  |  |
| DAR-HOV-3210 | Handover documentation (O&M, as-builts, warranties) | 2027-05-12 → 2027-05-06 (-6d) | 2027-06-22 → 2027-06-16 (-6d) |  |  | 42d → 46d |  |
| DAR-HOV-3220 | Defects walkdown with operator | 2027-06-07 → 2027-06-01 (-6d) | 2027-06-12 → 2027-06-06 (-6d) |  |  | 59d → 64d |  |
| DAR-HOV-M230 | Handover to operator | 2027-07-06 → 2027-06-30 (-6d) | 2027-07-06 → 2027-06-30 (-6d) |  |  | 38d → 43d |  |
| SNG | **Snagging & Defects** | 2027-04-27 → 2027-04-21 (-6d) | 2027-06-06 → 2027-05-31 (-6d) |  |  |  |  |
| DAR-HOV-3010 | Snagging & defects rectification | 2027-04-27 → 2027-04-21 (-6d) | 2027-06-06 → 2027-05-31 (-6d) |  |  | -7d → -2d |  |
| OPM | **Operator Mobilisation & Training** |  | 2027-09-02 → 2027-08-26 (-7d) |  |  |  |  |
| TRN | **Training & Familiarisation** |  | 2027-09-02 → 2027-08-26 (-7d) |  |  |  |  |
| DAR-OPM-4130 | On-site familiarisation & equipment training | 2027-07-07 → 2027-07-01 (-6d) | 2027-08-05 → 2027-07-30 (-6d) |  |  | -12d → -6d |  |
| DAR-OPM-4140 | SOPs & emergency procedures validated | 2027-08-08 → 2027-08-01 (-7d) | 2027-09-02 → 2027-08-26 (-7d) |  |  | -10d → -5d |  |
| DAR-OPM-M150 | Operator trained & certified | 2027-09-02 → 2027-08-26 (-7d) | 2027-09-02 → 2027-08-26 (-7d) |  |  | -10d → -5d |  |
| OTE | **Operational Trials & Test Events** | 2027-09-03 → 2027-08-27 (-7d) | 2027-10-12 → 2027-10-05 (-7d) |  |  |  |  |

| ID | Task | Start | Finish | Duration | Complete | Total float |
| --- | --- | --- | --- | --- | --- | --- |
| TEV | **Test Events** | 2027-09-29 → 2027-09-21 (-8d) | 2027-10-12 → 2027-10-05 (-7d) |  |  |  |
| DAR-OTE-5110 | Test events (invited guests) | 2027-09-29 → 2027-09-21 (-8d) | 2027-10-12 → 2027-10-05 (-7d) |  |  | -14d → -7d |
| TRL | **Operational Trials** | 2027-09-03 → 2027-08-27 (-7d) | 2027-09-28 → 2027-09-20 (-8d) |  |  |  |
| DAR-OTE-5010 | Operational trials (technical rehearsals) | 2027-09-03 → 2027-08-27 (-7d) | 2027-09-22 → 2027-09-15 (-7d) |  |  | -14d → -7d |
| DAR-OTE-5030 | Ticketing & POS systems trial | 2027-09-06 → 2027-08-30 (-7d) | 2027-09-12 → 2027-09-05 (-7d) |  |  | 1d → 8d |
| DAR-OTE-5020 | Emergency drills with civil defence | 2027-09-24 → 2027-09-16 (-8d) | 2027-09-28 → 2027-09-20 (-8d) |  |  | -14d → -7d |
| D1R | **Day 1 Readiness** | 2027-10-13 → 2027-10-06 (-7d) | 2027-10-21 → 2027-10-14 (-7d) |  |  |  |
| GAT | **Readiness Gates** | 2027-10-13 → 2027-10-06 (-7d) | 2027-10-21 → 2027-10-14 (-7d) |  |  |  |
| DAR-D1R-6010 | Operational readiness assessment | 2027-10-13 → 2027-10-06 (-7d) | 2027-10-21 → 2027-10-14 (-7d) |  |  | -10d → -5d |
| DAR-D1R-M020 | Asset Day 1 ready | 2027-10-21 → 2027-10-14 (-7d) | 2027-10-21 → 2027-10-14 (-7d) |  |  | -12d → -5d |
| PBR-CON-1132 | MEP second fix - Zone B |  |  |  | 3% → 78% |  |
| PBR-CON-1140 | BMS & ELV installation |  |  |  | 3% → 89% |  |
| PBR-CON-1135 | MEP second fix - Zone C (BOH & plant rooms) | 2026-10-11 A |  |  | 0% → 46% |  |
| PBR-CON-9010 | Construction supervision & site management (LOE) |  |  |  | 60% → 68% |  |
| PBR-CON-1320 | Tenant fit-out - wave 1 | 2026-09-27 A |  |  | 0% → 64% |  |
| PEW-CON-1050 | District cooling plant - civil & structure |  | 2026-10-26 A |  | 36% → 100% | 5d → none |
| PEW-CON-1060 | District cooling plant - chillers & pumps installation | 2026-10-27 A |  |  | 0% → 5% | 5d → 3d |
| PEW-CON-9010 | Enabling works supervision (LOE) |  |  |  | 17% → 28% |  |
| PEW-CON-1020 | Main substation building & equipment installation |  |  |  | 14% → 82% |  |
| PEW-CON-1030 | HV cabling |  |  |  | 15% → 90% |  |
| PEW-CON-1040 | HV cabling |  |  |  | 14% → 82% |  |
| PEW-CON-1110 | Primary access road & junctions |  | 2026-10-18 A |  | 52% → 100% | 205d → none |
| PEW-CON-1120 | Internal roads, lighting & signage | 2026-10-19 A |  |  | 0% → 26% |  |
| PEW-CON-1160 | Transport hub & car park structure | 2026-10-19 A |  |  | 0% → 22% |  |
| PEW-CON-1080 | Potable & irrigation water network | 2026-10-03 A |  |  | 0% → 57% |  |
| PRG | **Programme Integration & Day 1** |  | 2027-10-28 → 2027-10-21 (-7d) |  |  |  |
| PRG-OPM-4030 | FM mobilisation & maintenance contracts live | 2027-04-27 → 2027-04-21 (-6d) | 2027-06-28 → 2027-06-22 (-6d) |  |  | 67d → 71d |
| PRG-OPM-4020 | Service culture & guest-experience training |  | 2026-10-04 → 2026-10-29 (+25d) |  | 77% → 97% | 182d → 163d |
| PRG-OPM-4060 | Guest services & contact centre readiness | 2026-10-05 → 2026-11-01 (+27d) | 2026-11-01 → 2026-11-26 (+25d) |  |  | 182d → 163d |
| OTE | **Operational Trials & Test Events** |  | 2027-10-20 → 2027-10-13 (-7d) |  |  |  |
| TEV | **Test Events** | 2027-10-13 → 2027-10-06 (-7d) | 2027-10-20 → 2027-10-13 (-7d) |  |  |  |
| PRG-OTE-5020 | Integrated destination test event (all assets) | 2027-10-13 → 2027-10-06 (-7d) | 2027-10-17 → 2027-10-10 (-7d) |  |  | -11d → -4d |
| PRG-OTE-5030 | Opening ceremony operational rehearsal | 2027-10-18 → 2027-10-11 (-7d) | 2027-10-20 → 2027-10-13 (-7d) |  |  | -11d → -4d |
| D1R | **Day 1 Readiness** |  | 2027-10-28 → 2027-10-21 (-7d) |  |  |  |
| GAT | **Readiness Gates** |  | 2027-10-28 → 2027-10-21 (-7d) |  |  |  |
| PRG-D1R-M010 | RG1 Construction complete gate | 2027-04-26 → 2027-04-20 (-6d) | 2027-04-26 → 2027-04-20 (-6d) |  |  | 100d → 106d |
| PRG-D1R-M030 | RG3 Ready to operate gate | 2027-09-02 → 2027-08-26 (-7d) | 2027-09-02 → 2027-08-26 (-7d) |  |  | 21d → 28d |
| PRG-D1R-6020 | Day 1 command centre & hypercare set-up | 2027-09-03 → 2027-08-27 (-7d) | 2027-09-17 → 2027-09-10 (-7d) |  |  | 21d → 28d |
| PRG-D1R-6010 | Day 1 go/no-go readiness review | 2027-10-24 → 2027-10-17 (-7d) | 2027-10-28 → 2027-10-21 (-7d) |  |  | -10d → -5d |
| PRG-D1R-M040 | RG4 Day 1 go/no-go gate | 2027-10-28 → 2027-10-21 (-7d) | 2027-10-28 → 2027-10-21 (-7d) |  |  | -14d → -7d |
| PRG-D1R-M999 | Day 1 Opening | 2027-10-28 → 2027-10-21 (-7d) | 2027-10-28 → 2027-10-21 (-7d) |  |  | -14d → -7d |
| MGT | **Management & Supervision** |  | 2027-10-28 → 2027-10-21 (-7d) |  |  |  |
| PRG-D1R-9010 | Programme management & controls (LOE) |  | 2027-10-28 → 2027-10-21 (-7d) | 671d → 666d | 59% → 63% | -10d → -5d |

## Version 9 (data date 2026-10-29, saved 2026-10-29, file DOP_UPD_2026-10-29.xer)

Note of the change: feat(data): synthetic integrated master schedule, storyline, progress simulation and P6 XER export

Last finish stays 2027-10-21. Complete tasks 55 → 56.

Changed:

| ID | Task | Start | Finish | Complete | Total float | Other |
| --- | --- | --- | --- | --- | --- | --- |
| LWP-OPM-4020 | Onboarding & induction |  |  |  | 41d → 0d | constraint none → mandatory start 2027-02-21 |
| PRG-OPM-4020 | Service culture & guest-experience training |  | 2026-10-29 → 2026-10-04 A (-25d) | 97% → 100% | 163d → none |  |
| PRG-OPM-4060 | Guest services & contact centre readiness | 2026-11-01 → 2026-10-05 A (-27d) | 2026-11-26 → 2026-11-01 (-25d) | 0% → 90% | 163d → 182d |  |

## Version 10 (data date 2026-10-29, saved 2026-10-29, file DOP_UPD_2026-10-29.xer)

Note of the change: feat(pipeline): XER parser to star schema, DCMA and update-discipline checks, reconciliation gate, scenarios, Excel controls

Last finish stays 2027-10-21.

Changed:

| ID | Task | Total float | Other |
| --- | --- | --- | --- |
| LWP-OPM-4020 | Onboarding & induction | 0d → 41d | constraint mandatory start 2027-02-21 → none |
